# TopCoder Software Project Plan

Schedule from MS Project, 2004-01-27 to 2006-10-19, A marks actual dates.
TopCoder Software Project Plan
TopCoder

## Calendars

- Standard: Mon-Fri 08:00-12:00, 13:00-17:00; Sat-Sun off. Exceptions (off unless hours are given): 2006-09-04.

## Resources

| Resource |
| --- |
| Project Manager |
| Component Architect |
| Information Architect |
| Component Manager |
| Application Architect |
| Application Assembler 1 |
| Deployment Engineer 1 |
| Customer |
| Member |
| Review |
| Application Assembler 4 |
| Application Assembler 3 |
| Application Assembler 2 |
| Deployment Engineer 3 |
| Deployment Engineer 2 |
| Deployment Engineer |
| Deployment Engineer/Project Manager |
| Javier |
| Greg Paul |
| Dave Messinger |
| Lorie Norman |
| Tony Jefts |
| test case participants |
| All Teams |
| All Captains |
| Reviewer3 |
| Reviewer2 |
| Reviewer1 |
| Assembly Manager |
| Architect |
| DE |
| Review Team |
| Kim Ruhl |
| Petar Canic |
| WishingBone |
| Brian Chang |
| Dean Brodrick |
| Dan Ulery |
| albertwang |
| brain_cn |
| lorienorman |
| Developer |
| Winning Developer |
| albertwang (winner) |

## Schedule

| ID | WBS | Task | Type | Duration | Start | Finish | Predecessors | Complete | Remaining | Baseline start | Baseline finish | Baseline duration | Total slack | Constraint | Resources | Work | Actual work |
| --- | --- | --- | --- | --- | --- | --- | --- | --- | --- | --- | --- | --- | --- | --- | --- | --- | --- |
| 1 | 1 | **TopCoder Online Review/Scorecard Project** |  | 712d? | 2004-01-27 A | 2006-10-19 |  | 67% | 236.37d? |  |  |  | 3d |  |  | 8068h | 5612h |
| 2 | 1.1 | Kick Off Meeting |  | 0.33d? | 2006-03-02 | 2006-03-02 |  |  |  |  |  |  | 139.67d | start no earlier than 2006-03-02 | Dave Messinger; Lorie Norman; Tony Jefts | 8h |  |
| 3 | 1.2 | Creation of TopCoder Application Forum |  | 1d | 2006-03-02 A | 2006-03-03 A | 2 | 100% |  |  |  |  |  | start no earlier than 2005-06-29 | Lorie Norman | 8h | 8h |
| 4 | 1.3 | Assign Client Permissions to Forums |  | 1d | 2006-03-02 A | 2006-03-02 A |  | 100% |  |  |  |  |  | start no earlier than 2005-06-29 | Lorie Norman | 8h | 8h |
| 5 | 1.4 | Create SVN module for Application |  | 1d | 2005-06-29 A | 2005-06-29 A |  | 100% |  |  |  |  |  | start no earlier than 2005-06-29 | Lorie Norman | 8h | 8h |
| 6 | 1.5 | Key Stakeholder Meetings |  | 1.5d | 2006-03-06 A | 2006-03-07 A |  | 100% |  |  |  |  |  | start no earlier than 2006-03-06 | Greg Paul; Javier; Dave Messinger; Lorie Norman | 48h | 48h |
| 7 | 1.6 | **Application Specification** |  | 33.5d? | 2006-03-02 A | 2006-04-18 A |  | 100% |  | 2004-01-20 | 2004-02-11 | 17d? |  |  |  | 280h | 280h |
| 8 | 1.6.1 | **Requirement Specification Draft** |  | 1d | 2006-03-03 A | 2006-03-03 A |  | 100% |  | 2004-01-20 | 2004-01-22 | 3d? |  |  | Lorie Norman | 8h | 8h |
| 9 | 1.6.1.1 | Fill in Scope |  | 1d | 2006-03-03 A | 2006-03-03 A |  | 100% |  |  |  |  |  | start no earlier than 2006-03-03 |  |  |  |
| 10 | 1.6.2 | Review Meeting |  | 0.5d | 2006-03-06 A | 2006-03-06 A | 8 | 100% |  | 2004-01-23 | 2004-01-23 | 1d? |  |  | Project Manager; Customer | 8h | 8h |
| 11 | 1.6.3 | Create/Update Use Cases |  | 2d | 2006-03-02 A | 2006-03-03 A |  | 100% |  |  |  |  |  | start no earlier than 2006-03-02 |  |  |  |
| 12 | 1.6.4 | **Module Specification** |  | 18.5d | 2006-03-09 A | 2006-04-04 A |  | 100% |  | 2004-01-23 | 2004-02-11 | 14d? |  |  |  | 80h | 80h |
| 13 | 1.6.4.1 | Create/Update Activity Diagram |  | 10d | 2006-03-15 A | 2006-03-28 A | 10 | 100% |  |  |  |  |  | finish no earlier than 2006-03-28 | Project Manager | 80h | 80h |
| 14 | 1.6.4.2 | Fill in Logic Requirements for use cases and activity diagrams |  | 5d | 2006-03-09 A | 2006-04-03 A | 13 | 100% |  |  |  |  |  |  |  |  |  |
| 15 | 1.6.4.3 | Review Meeting |  | 1d | 2006-04-04 A | 2006-04-04 A | 14 | 100% |  |  |  |  |  | start no earlier than 2006-03-10 |  |  |  |
| 16 | 1.6.5 | Create Site Map |  | 1d? | 2006-04-04 A | 2006-04-04 A |  | 100% |  |  |  |  |  | start no earlier than 2006-04-04 |  |  |  |
| 17 | 1.6.6 | Review Meeting |  | 0.5d | 2006-04-03 A | 2006-04-03 A |  | 100% |  |  |  |  |  | start no earlier than 2006-04-03 |  |  |  |
| 18 | 1.6.7 | Prototype Revision 1 |  | 14d | 2006-03-20 A | 2006-04-06 A |  | 100% |  |  |  |  |  | finish no earlier than 2006-04-06 | Kim Ruhl | 112h | 112h |
| 19 | 1.6.8 | Architecture Diagram Draft |  | 1d | 2006-03-22 A | 2006-03-23 A | 17 | 100% |  | 2004-01-27 | 2004-01-28 | 2d? |  | start no earlier than 2005-01-19 | Project Manager | 8h | 8h |
| 20 | 1.6.9 | Fill in Technical Requirements |  | 0.5d | 2006-04-04 A | 2006-04-04 A | 19 | 100% |  |  |  |  |  | start no earlier than 2006-04-04 |  |  |  |
| 21 | 1.6.10 | Review Meeting |  | 2d | 2006-04-07 A | 2006-04-10 A | 18 | 100% |  | 2004-01-30 | 2004-01-30 | 1d? |  | start no earlier than 2006-04-07 | Project Manager; Customer | 32h | 32h |
| 22 | 1.6.11 | Prototype Revision 2 Review |  | 2d | 2006-04-11 A | 2006-04-12 A | 21 | 100% |  |  |  |  |  | start no earlier than 2006-04-11 |  |  |  |
| 23 | 1.6.12 | Complete QA Plan |  | 1d | 2006-04-05 A | 2006-04-05 A | 12 | 100% |  |  |  |  |  |  |  |  |  |
| 24 | 1.6.13 | Review Meeting |  | 0.5d | 2006-04-13 A | 2006-04-13 A | 22 | 100% |  | 2004-02-06 | 2004-02-06 | 1d? |  |  | Project Manager; Customer | 8h | 8h |
| 25 | 1.6.14 | Update Final Specification Deliverables |  | 2d | 2006-04-13 A | 2006-04-17 A | 24 | 100% |  | 2004-02-09 | 2004-02-10 | 2d? |  | start no earlier than 2006-04-06 | Project Manager | 16h | 16h |
| 26 | 1.6.15 | Final Specification Presentation | milestone | 1d? | 2006-04-17 A | 2006-04-18 A | 25 | 100% |  | 2004-02-11 | 2004-02-11 | 1d? |  |  | Project Manager | 8h | 8h |

Notes:
- 12: This will be iterated over multiple times for each module.

| ID | WBS | Task | Type | Duration | Start | Finish | Predecessors | Complete | Remaining | Total slack | Free slack | Constraint | Resources | Work | Actual work |
| --- | --- | --- | --- | --- | --- | --- | --- | --- | --- | --- | --- | --- | --- | --- | --- |
| 27 | 1.7 | **Application Architecture** |  | 35.5d | 2006-04-18 A | 2006-06-06 A |  | 100% |  |  |  |  |  | 728h | 728h |
| 28 | 1.7.1 | Test Scenarios |  | 10d | 2006-05-08 A | 2006-05-19 A | 23 | 100% |  |  |  | start no earlier than 2006-05-08 | Dean Brodrick | 80h | 80h |
| 29 | 1.7.2 | Update Site Map |  | 5d | 2006-04-18 A | 2006-04-25 A | 7 | 100% |  |  |  |  | Kim Ruhl; Petar Canic | 80h | 80h |
| 30 | 1.6.3 | Physical Data Model Definition |  | 5d | 2006-04-18 A | 2006-04-25 A | 7 | 100% |  |  |  | finish no earlier than 2005-02-04 | WishingBone | 40h | 40h |
| 31 | 1.7.4 | **UML Diagrams** |  | 32d | 2006-04-20 A | 2006-06-02 A |  | 100% |  |  |  |  |  | 464h | 464h |
| 32 | 1.6.2 | Component Sequence Diagrams |  | 31d | 2006-04-20 A | 2006-06-01 A |  | 100% |  |  |  | finish no earlier than 2006-06-01 | WishingBone | 248h | 248h |
| 33 | 1.6.1 | Component Interface Diagram |  | 25d | 2006-05-01 A | 2006-06-02 A |  | 100% |  |  |  | finish no earlier than 2006-06-02 | WishingBone | 200h | 200h |
| 34 | 1.7.4.3 | Component Diagram |  | 2d | 2006-05-25 A | 2006-05-26 A |  | 100% |  |  |  | finish no earlier than 2006-05-28 | WishingBone | 16h | 16h |
| 35 | 1.6.5 | Component Specifications | milestone | 5d | 2006-05-29 A | 2006-06-02 A |  | 100% |  |  |  | finish no earlier than 2006-06-02 | Component Architect | 40h | 40h |
| 36 | 1.7.6 | Application Design Specification |  | 1d | 2006-06-05 A | 2006-06-05 A | 35 | 100% |  |  |  | finish no earlier than 2006-06-02 | Component Architect | 8h | 8h |
| 37 | 1.7.7 | Review |  | 1d | 2006-06-06 A | 2006-06-06 A | 36 | 100% |  |  |  |  | Project Manager; Component Architect | 16h | 16h |
| 38 | 1.8 | **Component Production** |  | 56d | 2006-05-25 A | 2006-08-10 |  | 78% | 12.33d | 49d |  |  |  | 5596h | 4364h |
| 39 | 1.8.1 | **File Upload 2.0** |  | 36d | 2006-05-25 A | 2006-07-13 |  | 90% | 3.6d | 72d |  |  |  | 240h | 216h |
| 40 | 1.8.1.1 | Design Posting |  | 7d | 2006-05-25 A | 2006-06-02 A |  | 100% |  |  |  | start no earlier than 2006-05-25 | Member | 56h | 56h |
| 41 | 1.8.1.2 | Design Review |  | 7d | 2006-06-02 A | 2006-06-12 A | 40 | 100% |  |  |  | finish no earlier than 2005-03-21 | Member | 56h | 56h |
| 42 | 1.8.1.3 | Design Final Fixes |  | 2d | 2006-06-13 A | 2006-06-14 A | 41 | 100% |  |  |  |  | Member | 16h | 16h |
| 43 | 1.8.1.4 | Creation of Dev Distro |  | 1d | 2006-06-15 A | 2006-06-15 A | 42 | 100% |  |  |  | finish no earlier than 2006-06-15 | Component Manager | 8h | 8h |
| 44 | 1.8.1.5 | Development Posting |  | 6d | 2006-06-22 A | 2006-06-29 A | 43 | 100% |  |  |  | start no earlier than 2005-03-30 | Member | 48h | 48h |
| 45 | 1.8.1.6 | Development Review |  | 4d | 2006-07-03 A | 2006-07-06 A | 44 | 100% |  |  |  | finish no earlier than 2006-07-06 | Member | 32h | 32h |
| 46 | 1.8.1.7 | Development Final Fixes |  | 2d | 2006-07-11 | 2006-07-12 | 45 |  |  | 72d | 0d | finish no earlier than 2006-07-12 | Member | 16h |  |
| 47 | 1.8.1.8 | Post to Catalog |  | 1d | 2006-07-13 | 2006-07-13 | 46 |  |  | 19d |  |  | Component Manager | 8h |  |
| 48 | 1.8.2 | **Cached Web Element Tag** |  | 34d | 2006-05-25 A | 2006-07-11 A |  | 100% |  |  |  |  |  | 208h | 208h |
| 49 | 1.8.2.1 | Design Posting |  | 6d | 2006-05-25 A | 2006-06-01 A |  | 100% |  |  |  | start no earlier than 2006-05-25 | Member | 48h | 48h |
| 50 | 1.8.2.2 | Design Review |  | 4d | 2006-06-02 A | 2006-06-07 A | 49 | 100% |  |  |  | finish no earlier than 2005-03-21 | Member | 32h | 32h |
| 51 | 1.8.2.3 | Design Final Fixes |  | 2d | 2006-06-16 A | 2006-06-19 A | 50 | 100% |  |  |  | finish no earlier than 2006-06-19 | Member | 16h | 16h |
| 52 | 1.8.2.4 | Creation of Dev Distro |  | 1d | 2006-06-20 A | 2006-06-20 A | 51 | 100% |  |  |  |  | Component Manager | 8h | 8h |
| 53 | 1.8.2.5 | Development Posting |  | 6d | 2006-06-22 A | 2006-06-29 A | 52 | 100% |  |  |  | start no earlier than 2005-03-30 | Member | 48h | 48h |
| 54 | 1.8.2.6 | Development Review |  | 4d | 2006-06-30 A | 2006-07-05 A | 53 | 100% |  |  |  |  | Member | 32h | 32h |
| 55 | 1.8.2.7 | Development Final Fixes |  | 2d | 2006-07-07 A | 2006-07-10 A | 54 | 100% |  |  |  | finish no earlier than 2006-07-10 | Member | 16h | 16h |
| 56 | 1.8.2.8 | Post to Catalog |  | 1d | 2006-07-11 A | 2006-07-11 A | 55 | 100% |  |  |  |  | Component Manager | 8h | 8h |

| ID | WBS | Task | Duration | Start | Finish | Predecessors | Complete | Remaining | Total slack | Free slack | Constraint | Resources | Work | Actual work |
| --- | --- | --- | --- | --- | --- | --- | --- | --- | --- | --- | --- | --- | --- | --- |
| 57 | 1.8.3 | **Database Abstraction 1.1** | 31d | 2006-05-25 A | 2006-07-06 |  | 88% | 3.72d | 27d | 0d |  |  | 200h | 176h |
| 58 | 1.8.3.1 | Design Posting | 6d | 2006-05-25 A | 2006-06-01 A |  | 100% |  |  |  | start no earlier than 2006-05-25 | Member | 48h | 48h |
| 59 | 1.8.3.2 | Design Review | 4d | 2006-06-02 A | 2006-06-07 A | 58 | 100% |  |  |  | finish no earlier than 2005-03-21 | Member | 32h | 32h |
| 60 | 1.8.3.3 | Design Final Fixes | 2d | 2006-06-08 A | 2006-06-09 A | 59 | 100% |  |  |  |  | Member | 16h | 16h |
| 61 | 1.8.3.4 | Creation of Dev Distro | 1d | 2006-06-12 A | 2006-06-12 A | 60 | 100% |  |  |  |  | Component Manager | 8h | 8h |
| 62 | 1.8.3.5 | Development Posting | 5d | 2006-06-15 A | 2006-06-21 A | 61 | 100% |  |  |  | finish no earlier than 2006-06-21 | Member | 40h | 40h |
| 63 | 1.8.3.6 | Development Review | 4d | 2006-06-27 A | 2006-06-30 A | 62 | 100% |  |  |  | finish no earlier than 2006-06-30 | Member | 32h | 32h |
| 64 | 1.8.3.7 | Development Final Fixes | 2d | 2006-07-04 | 2006-07-05 | 63 |  |  | 27d | 0d | finish no earlier than 2006-07-05 | Member | 16h |  |
| 65 | 1.8.3.8 | Post to Catalog | 1d | 2006-07-06 | 2006-07-06 | 64 |  |  | 23d |  |  | Component Manager | 8h |  |
| 66 | 1.8.4 | **Scorecard Management (2 dev)** | 33d | 2006-06-01 A | 2006-07-17 |  | 84% | 5.21d | 17d | 0d |  |  | 304h | 256h |
| 67 | 1.8.4.1 | Design Posting | 5d | 2006-06-01 A | 2006-06-07 A |  | 100% |  |  |  | start no earlier than 2006-06-01 | Member | 40h | 40h |
| 68 | 1.8.4.2 | Design Review | 4d | 2006-06-12 A | 2006-06-15 A | 67 | 100% |  |  |  | finish no earlier than 2006-06-15 | Member | 32h | 32h |
| 69 | 1.8.4.3 | Design Final Fixes | 3d | 2006-06-16 A | 2006-06-20 A | 68 | 100% |  |  |  | finish no earlier than 2006-06-20 | Member | 24h | 24h |
| 70 | 1.8.4.4 | **Scorecard Management Development** | 16d | 2006-06-21 A | 2006-07-12 | 69 | 79% | 3.43d | 20d |  |  |  | 112h | 88h |
| 71 | 1.8.4.4.1 | Creation of Management Dev Distro | 1d | 2006-06-21 A | 2006-06-21 A | 69 | 100% |  |  |  |  | Component Manager | 8h | 8h |
| 72 | 1.8.4.4.2 | Development Posting | 6d | 2006-06-22 A | 2006-06-29 A | 71 | 100% |  |  |  | start no earlier than 2005-03-30 | Member | 48h | 48h |
| 73 | 1.8.4.4.3 | Development Review | 4d | 2006-07-03 A | 2006-07-06 A | 72 | 100% |  |  |  | finish no earlier than 2006-07-06 | Member | 32h | 32h |
| 74 | 1.8.4.4.4 | Development Final Fixes | 2d | 2006-07-10 | 2006-07-11 | 73 |  |  | 20d | 0d | finish no earlier than 2006-07-11 | Member | 16h |  |
| 75 | 1.8.4.4.5 | Post to Catalog | 1d | 2006-07-12 | 2006-07-12 | 74 |  |  | 20d |  |  | Component Manager | 8h |  |
| 76 | 1.8.4.5 | **Scorecard Persistence Development** | 19d | 2006-06-21 A | 2006-07-17 |  | 75% | 4.75d | 17d |  |  |  | 96h | 72h |
| 77 | 1.8.4.5.1 | Creation of Management Dev Distro | 1d | 2006-06-21 A | 2006-06-21 A | 69 | 100% |  |  |  |  | Component Manager | 8h | 8h |
| 78 | 1.8.4.5.2 | Development Posting | 4d | 2006-06-29 A | 2006-07-04 A | 77 | 100% |  |  |  | start no earlier than 2005-03-30 | Member | 32h | 32h |
| 79 | 1.8.4.5.3 | Development Review | 4d | 2006-07-06 A | 2006-07-11 A | 78 | 100% |  |  |  | finish no earlier than 2006-07-11 | Member | 32h | 32h |
| 80 | 1.8.4.5.4 | Development Final Fixes | 2d | 2006-07-13 | 2006-07-14 | 79 |  |  | 17d | 0d | finish no earlier than 2006-07-14 | Member | 16h |  |
| 81 | 1.8.4.5.5 | Post to Catalog | 1d | 2006-07-17 | 2006-07-17 | 80 |  |  | 17d |  |  | Component Manager | 8h |  |

| ID | WBS | Task | Duration | Start | Finish | Predecessors | Complete | Remaining | Total slack | Free slack | Constraint | Resources | Work | Actual work |
| --- | --- | --- | --- | --- | --- | --- | --- | --- | --- | --- | --- | --- | --- | --- |
| 82 | 1.8.5 | **Scorecard Data Structure** | 30d | 2006-06-01 A | 2006-07-12 A |  | 100% |  |  |  |  |  | 212h | 212h |
| 83 | 1.8.5.1 | Design Posting | 5d | 2006-06-01 A | 2006-06-07 A |  | 100% |  |  |  | finish no earlier than 2006-06-07 | Member | 40h | 40h |
| 84 | 1.8.5.2 | Design Review | 4d | 2006-06-13 A | 2006-06-18 A | 83 | 100% |  |  |  | finish no earlier than 2006-06-18 | Member | 32h | 32h |
| 85 | 1.8.5.3 | Design Final Fixes | 2d | 2006-06-19 A | 2006-06-20 A | 84 | 100% |  |  |  | finish no earlier than 2006-06-20 | Member | 16h | 16h |
| 86 | 1.8.5.4 | Creation of Dev Distro | 0.5d | 2006-06-21 A | 2006-06-21 A | 85 | 100% |  |  |  |  | Component Manager | 4h | 4h |
| 87 | 1.8.5.5 | Development Posting | 6d | 2006-06-21 A | 2006-06-29 A | 86 | 100% |  |  |  | start no earlier than 2005-03-30 | Member | 48h | 48h |
| 88 | 1.8.5.6 | Development Review | 6d | 2006-06-30 A | 2006-07-07 A | 87 | 100% |  |  |  | finish no earlier than 2006-07-07 | Member | 48h | 48h |
| 89 | 1.8.5.7 | Development Final Fixes | 2d | 2006-07-10 A | 2006-07-11 A | 88 | 100% |  |  |  | finish no earlier than 2006-07-11 | Member | 16h | 16h |
| 90 | 1.8.5.8 | Post to Catalog | 1d | 2006-07-12 A | 2006-07-12 A | 89 | 100% |  |  |  |  | Component Manager | 8h | 8h |
| 91 | 1.8.6 | **Review Management (2 dev)** | 30d | 2006-06-01 A | 2006-07-12 |  | 93% | 2.25d | 23d | 0d |  |  | 320h | 296h |
| 92 | 1.8.6.1 | Design Posting | 6d | 2006-06-01 A | 2006-06-08 A |  | 100% |  |  |  | start no earlier than 2006-06-01 | Member | 48h | 48h |
| 93 | 1.8.6.2 | Design Review | 4d | 2006-06-09 A | 2006-06-14 A | 92 | 100% |  |  |  | finish no earlier than 2005-03-21 | Member | 32h | 32h |
| 94 | 1.8.6.3 | Design Final Fixes | 2d | 2006-06-15 A | 2006-06-16 A | 93 | 100% |  |  |  |  | Member | 16h | 16h |
| 95 | 1.8.6.4 | **Review Management Development** | 18d | 2006-06-19 A | 2006-07-12 A | 94 | 100% |  |  |  |  |  | 112h | 112h |
| 96 | 1.8.6.4.1 | Creation of Management Dev Distro | 1d | 2006-06-19 A | 2006-06-19 A | 94 | 100% |  |  |  |  | Component Manager | 8h | 8h |
| 97 | 1.8.6.4.2 | Development Posting | 6d | 2006-06-22 A | 2006-06-29 A | 96 | 100% |  |  |  | start no earlier than 2005-03-30 | Member | 48h | 48h |
| 98 | 1.8.6.4.3 | Development Review | 4d | 2006-07-03 A | 2006-07-06 A | 97 | 100% |  |  |  | finish no earlier than 2006-07-06 | Member | 32h | 32h |
| 99 | 1.8.6.4.4 | Development Final Fixes | 2d | 2006-07-10 A | 2006-07-11 A | 98 | 100% |  |  |  | finish no earlier than 2006-07-11 | Member | 16h | 16h |
| 100 | 1.8.6.4.5 | Post to Catalog | 1d | 2006-07-12 A | 2006-07-12 A | 99 | 100% |  |  |  |  | Component Manager | 8h | 8h |
| 101 | 1.8.6.5 | **Review Persistence Development** | 18d | 2006-06-19 A | 2006-07-12 |  | 79% | 3.86d | 23d |  |  |  | 112h | 88h |
| 102 | 1.8.6.5.1 | Creation of Management Dev Distro | 1d | 2006-06-19 A | 2006-06-19 A | 94 | 100% |  |  |  |  | Component Manager | 8h | 8h |
| 103 | 1.8.6.5.2 | Development Posting | 6d | 2006-06-22 A | 2006-06-29 A | 102 | 100% |  |  |  | start no earlier than 2005-03-30 | Member | 48h | 48h |
| 104 | 1.8.6.5.3 | Development Review | 4d | 2006-07-03 A | 2006-07-06 A | 103 | 100% |  |  |  | start no earlier than 2006-07-03 | Member | 32h | 32h |
| 105 | 1.8.6.5.4 | Development Final Fixes | 2d | 2006-07-10 | 2006-07-11 | 104 |  |  | 20d | 0d | start no earlier than 2006-07-10 | Member | 16h |  |
| 106 | 1.8.6.5.5 | Post to Catalog | 1d | 2006-07-12 | 2006-07-12 | 105 |  |  | 20d |  |  | Component Manager | 8h |  |

| ID | WBS | Task | Duration | Start | Finish | Predecessors | Complete | Remaining | Total slack | Free slack | Constraint | Resources | Work | Actual work |
| --- | --- | --- | --- | --- | --- | --- | --- | --- | --- | --- | --- | --- | --- | --- |
| 107 | 1.8.7 | **Project Phases 2.0** | 35d | 2006-06-08 A | 2006-07-26 |  | 73% | 9.42d | 13d | 0d |  |  | 208h | 152h |
| 108 | 1.8.7.1 | Design Posting | 6d | 2006-06-08 A | 2006-06-15 A |  | 100% |  |  |  | start no earlier than 2006-06-08 | Member | 48h | 48h |
| 109 | 1.8.7.2 | Design Review | 4d | 2006-06-16 A | 2006-06-21 A | 108 | 100% |  |  |  | finish no earlier than 2005-03-21 | Member | 32h | 32h |
| 110 | 1.8.7.3 | Design Final Fixes | 2d | 2006-06-22 A | 2006-06-23 A | 109 | 100% |  |  |  |  | Member | 16h | 16h |
| 111 | 1.8.7.4 | Creation of Dev Distro | 1d | 2006-06-26 A | 2006-06-26 A | 110 | 100% |  |  |  |  | Component Manager | 8h | 8h |
| 112 | 1.8.7.5 | Development Posting | 6d | 2006-07-06 A | 2006-07-13 A | 111 | 100% |  |  |  | start no earlier than 2006-07-06 | Member | 48h | 48h |
| 113 | 1.8.7.6 | Development Review | 4d | 2006-07-18 | 2006-07-21 | 112 |  |  | 13d | 0d | finish no earlier than 2006-07-21 | Member | 32h |  |
| 114 | 1.8.7.7 | Development Final Fixes | 2d | 2006-07-24 | 2006-07-25 | 113 |  |  | 10d | 0d | finish no earlier than 2006-07-25 | Member | 16h |  |
| 115 | 1.8.7.8 | Post to Catalog | 1d | 2006-07-26 | 2006-07-26 | 114 |  |  | 10d |  |  | Component Manager | 8h |  |
| 116 | 1.8.8 | **Review Score Calculator** | 30d | 2006-06-08 A | 2006-07-19 A |  | 100% |  |  |  |  |  | 208h | 208h |
| 117 | 1.8.8.1 | Design Posting | 6d | 2006-06-08 A | 2006-06-15 A |  | 100% |  |  |  | start no earlier than 2006-06-08 | Member | 48h | 48h |
| 118 | 1.8.8.2 | Design Review | 4d | 2006-06-16 A | 2006-06-21 A | 117 | 100% |  |  |  | finish no earlier than 2005-03-21 | Member | 32h | 32h |
| 119 | 1.8.8.3 | Design Final Fixes | 2d | 2006-06-22 A | 2006-06-23 A | 118 | 100% |  |  |  |  | Member | 16h | 16h |
| 120 | 1.8.8.4 | Creation of Dev Distro | 1d | 2006-06-26 A | 2006-06-26 A | 119 | 100% |  |  |  |  | Component Manager | 8h | 8h |
| 121 | 1.8.8.5 | Development Posting | 6d | 2006-06-29 A | 2006-07-06 A | 120 | 100% |  |  |  | start no earlier than 2006-06-29 | Member | 48h | 48h |
| 122 | 1.8.8.6 | Development Review | 4d | 2006-07-10 A | 2006-07-13 A | 121 | 100% |  |  |  | finish no earlier than 2006-07-13 | Member | 32h | 32h |
| 123 | 1.8.8.7 | Development Final Fixes | 2d | 2006-07-17 A | 2006-07-18 A | 122 | 100% |  |  |  | finish no earlier than 2006-07-18 | Member | 16h | 16h |
| 124 | 1.8.8.8 | Post to Catalog | 1d | 2006-07-19 A | 2006-07-19 A | 123 | 100% |  |  |  |  | Component Manager | 8h | 8h |
| 125 | 1.8.9 | **Review Score Aggregator** | 30d | 2006-06-08 A | 2006-07-19 |  | 73% | 8.08d | 18d | 0d |  |  | 208h | 152h |
| 126 | 1.8.9.1 | Design Posting | 6d | 2006-06-08 A | 2006-06-15 A |  | 100% |  |  |  | start no earlier than 2006-06-08 | Member | 48h | 48h |
| 127 | 1.8.9.2 | Design Review | 4d | 2006-06-16 A | 2006-06-21 A | 126 | 100% |  |  |  | finish no earlier than 2005-03-21 | Member | 32h | 32h |
| 128 | 1.8.9.3 | Design Final Fixes | 2d | 2006-06-22 A | 2006-06-23 A | 127 | 100% |  |  |  |  | Member | 16h | 16h |
| 129 | 1.8.9.4 | Creation of Dev Distro | 1d | 2006-06-26 A | 2006-06-26 A | 128 | 100% |  |  |  |  | Component Manager | 8h | 8h |
| 130 | 1.8.9.5 | Development Posting | 6d | 2006-06-29 A | 2006-07-06 A | 129 | 100% |  |  |  | start no earlier than 2006-06-29 | Member | 48h | 48h |
| 131 | 1.8.9.6 | Development Review | 4d | 2006-07-10 | 2006-07-13 | 130 |  |  | 19d | 1d | finish no earlier than 2006-07-13 | Member | 32h |  |
| 132 | 1.8.9.7 | Development Final Fixes | 2d | 2006-07-17 | 2006-07-18 | 131 |  |  | 18d | 0d | finish no earlier than 2006-07-18 | Member | 16h |  |
| 133 | 1.8.9.8 | Post to Catalog | 1d | 2006-07-19 | 2006-07-19 | 132 |  |  | 14d |  |  | Component Manager | 8h |  |

| ID | WBS | Task | Duration | Start | Finish | Predecessors | Complete | Remaining | Total slack | Free slack | Constraint | Resources | Work | Actual work |
| --- | --- | --- | --- | --- | --- | --- | --- | --- | --- | --- | --- | --- | --- | --- |
| 134 | 1.8.10 | **Project Management (2 dev)** | 31d | 2006-06-08 A | 2006-07-20 |  | 93% | 2.21d | 17d | 0d |  |  | 336h | 312h |
| 135 | 1.8.10.1 | Design Posting | 6d | 2006-06-08 A | 2006-06-15 A |  | 100% |  |  |  | start no earlier than 2006-06-08 | Member | 48h | 48h |
| 136 | 1.8.10.2 | Design Review | 4d | 2006-06-16 A | 2006-06-21 A | 135 | 100% |  |  |  | finish no earlier than 2005-03-21 | Member | 32h | 32h |
| 137 | 1.8.10.3 | Design Final Fixes | 2d | 2006-06-22 A | 2006-06-23 A | 136 | 100% |  |  |  |  | Member | 16h | 16h |
| 138 | 1.8.10.4 | **Project Management Development** | 18d | 2006-06-26 A | 2006-07-19 A | 137 | 100% |  |  |  |  |  | 128h | 128h |
| 139 | 1.8.10.4.1 | Creation of Management Dev Distro | 1d | 2006-06-26 A | 2006-06-26 A | 137 | 100% |  |  |  |  | Component Manager | 8h | 8h |
| 140 | 1.8.10.4.2 | Development Posting | 6d | 2006-06-29 A | 2006-07-06 A | 139 | 100% |  |  |  | start no earlier than 2006-06-29 | Member | 48h | 48h |
| 141 | 1.8.10.4.3 | Development Review | 6d | 2006-07-07 A | 2006-07-14 A | 140 | 100% |  |  |  | finish no earlier than 2006-07-14 | Member | 48h | 48h |
| 142 | 1.8.10.4.4 | Development Final Fixes | 2d | 2006-07-17 A | 2006-07-18 A | 141 | 100% |  |  |  | finish no earlier than 2006-07-18 | Member | 16h | 16h |
| 143 | 1.8.10.4.5 | Post to Catalog | 1d | 2006-07-19 A | 2006-07-19 A | 142 | 100% |  |  |  |  | Component Manager | 8h | 8h |
| 144 | 1.8.10.5 | **Project Persistence Development** | 19d | 2006-06-26 A | 2006-07-20 |  | 79% | 4.07d | 17d |  |  |  | 112h | 88h |
| 145 | 1.8.10.5.1 | Creation of Management Dev Distro | 1d | 2006-06-26 A | 2006-06-26 A | 137 | 100% |  |  |  |  | Component Manager | 8h | 8h |
| 146 | 1.8.10.5.2 | Development Posting | 6d | 2006-06-29 A | 2006-07-06 A | 145 | 100% |  |  |  | start no earlier than 2006-06-29 | Member | 48h | 48h |
| 147 | 1.8.10.5.3 | Development Review | 4d | 2006-07-10 A | 2006-07-13 A | 146 | 100% |  |  |  | finish no earlier than 2006-07-13 | Member | 32h | 32h |
| 148 | 1.8.10.5.4 | Development Final Fixes | 2d | 2006-07-18 | 2006-07-19 | 147 |  |  | 17d | 0d | finish no earlier than 2006-07-19 | Member | 16h |  |
| 149 | 1.8.10.5.5 | Post to Catalog | 1d | 2006-07-20 | 2006-07-20 | 148 |  |  | 14d |  |  | Component Manager | 8h |  |
| 150 | 1.8.11 | **Resource Management** | 37d | 2006-06-08 A | 2006-07-28 |  | 62% | 14.1d | 11d | 0d |  |  | 336h | 208h |
| 151 | 1.8.11.1 | Design Posting | 6d | 2006-06-08 A | 2006-06-15 A |  | 100% |  |  |  | start no earlier than 2006-06-08 | Member | 48h | 48h |
| 152 | 1.8.11.2 | Design Review | 4d | 2006-06-16 A | 2006-06-21 A | 151 | 100% |  |  |  | finish no earlier than 2005-03-21 | Member | 32h | 32h |
| 153 | 1.8.11.3 | Design Final Fixes | 2d | 2006-06-22 A | 2006-06-23 A | 152 | 100% |  |  |  |  | Member | 16h | 16h |
| 154 | 1.8.11.4 | **Resource Management Development** | 23d | 2006-06-26 A | 2006-07-26 | 153 | 44% | 12.94d | 13d |  |  |  | 128h | 56h |
| 155 | 1.8.11.4.1 | Creation of Management Dev Distro | 1d | 2006-06-26 A | 2006-06-26 A | 153 | 100% |  |  |  |  | Component Manager | 8h | 8h |
| 156 | 1.8.11.4.2 | Development Posting | 6d | 2006-07-06 A | 2006-07-13 A | 155 | 100% |  |  |  | start no earlier than 2006-07-13 | Member | 48h | 48h |
| 157 | 1.8.11.4.3 | Development Review | 6d | 2006-07-14 | 2006-07-21 | 156 |  |  | 10d | 0d | start no earlier than 2006-07-14 | Member | 48h |  |
| 158 | 1.8.11.4.4 | Development Final Fixes | 2d | 2006-07-24 | 2006-07-25 | 157 |  |  | 10d | 0d | finish no earlier than 2006-07-25 | Member | 16h |  |
| 159 | 1.8.11.4.5 | Post to Catalog | 1d | 2006-07-26 | 2006-07-26 | 158 |  |  | 10d |  |  | Component Manager | 8h |  |

Notes:
- 150: jmj

| ID | WBS | Task | Duration | Start | Finish | Predecessors | Complete | Remaining | Total slack | Free slack | Constraint | Resources | Work | Actual work |
| --- | --- | --- | --- | --- | --- | --- | --- | --- | --- | --- | --- | --- | --- | --- |
| 160 | 1.8.11.5 | **Resource Persistence Development** | 25d | 2006-06-26 A | 2006-07-28 |  | 50% | 12.5d | 11d |  |  |  | 112h | 56h |
| 161 | 1.8.11.5.1 | Creation of Management Dev Distro | 1d | 2006-06-26 A | 2006-06-26 A | 153 | 100% |  |  |  |  | Component Manager | 8h | 8h |
| 162 | 1.8.11.5.2 | Development Posting | 6d | 2006-07-06 A | 2006-07-13 A | 161 | 100% |  |  |  | start no earlier than 2006-07-06 | Member | 48h | 48h |
| 163 | 1.8.11.5.3 | Development Review | 4d | 2006-07-18 | 2006-07-21 | 162 |  |  | 13d | 2d | finish no earlier than 2006-07-21 | Member | 32h |  |
| 164 | 1.8.11.5.4 | Development Final Fixes | 2d | 2006-07-26 | 2006-07-27 | 163 |  |  | 11d | 0d | finish no earlier than 2006-07-27 | Member | 16h |  |
| 165 | 1.8.11.5.5 | Post to Catalog | 1d | 2006-07-28 | 2006-07-28 | 164 |  |  | 8d |  |  | Component Manager | 8h |  |
| 166 | 1.8.12 | **Deliverable Management** | 37d | 2006-06-08 A | 2006-07-28 |  | 65% | 12.95d | 11d | 0d |  |  | 320h | 208h |
| 167 | 1.8.12.1 | Design Posting | 6d | 2006-06-08 A | 2006-06-15 A |  | 100% |  |  |  | start no earlier than 2006-06-08 | Member | 48h | 48h |
| 168 | 1.8.12.2 | Design Review | 4d | 2006-06-16 A | 2006-06-21 A | 167 | 100% |  |  |  | finish no earlier than 2005-03-21 | Member | 32h | 32h |
| 169 | 1.8.12.3 | Design Final Fixes | 2d | 2006-06-22 A | 2006-06-23 A | 168 | 100% |  |  |  |  | Member | 16h | 16h |
| 170 | 1.8.12.4 | **Deliverable Management Development** | 24d | 2006-06-26 A | 2006-07-27 |  | 50% | 12d | 12d |  |  |  | 112h | 56h |
| 171 | 1.8.12.4.1 | Creation of Management Dev Distro | 1d | 2006-06-26 A | 2006-06-26 A | 169 | 100% |  |  |  |  | Component Manager | 8h | 8h |
| 172 | 1.8.12.4.2 | Development Posting | 6d | 2006-07-06 A | 2006-07-13 A | 171 | 100% |  |  |  | start no earlier than 2006-07-06 | Member | 48h | 48h |
| 173 | 1.8.12.4.3 | Development Review | 4d | 2006-07-19 | 2006-07-24 | 172 |  |  | 12d | 0d | finish no earlier than 2006-07-24 | Member | 32h |  |
| 174 | 1.8.12.4.4 | Development Final Fixes | 2d | 2006-07-25 | 2006-07-26 | 173 |  |  | 9d | 0d | finish no earlier than 2006-07-20 | Member | 16h |  |
| 175 | 1.8.12.4.5 | Post to Catalog | 1d | 2006-07-27 | 2006-07-27 | 174 |  |  | 9d |  |  | Component Manager | 8h |  |
| 176 | 1.8.12.5 | **Deliverable Persistence Development** | 25d | 2006-06-26 A | 2006-07-28 |  | 50% | 12.5d | 11d |  |  |  | 112h | 56h |
| 177 | 1.8.12.5.1 | Creation of Management Dev Distro | 1d | 2006-06-26 A | 2006-06-26 A | 169 | 100% |  |  |  |  | Component Manager | 8h | 8h |
| 178 | 1.8.12.5.2 | Development Posting | 6d | 2006-07-06 A | 2006-07-13 A | 177 | 100% |  |  |  | start no earlier than 2006-07-06 | Member | 48h | 48h |
| 179 | 1.8.12.5.3 | Development Review | 4d | 2006-07-19 | 2006-07-24 | 178 |  |  | 12d | 1d | finish no earlier than 2006-07-24 | Member | 32h |  |
| 180 | 1.8.12.5.4 | Development Final Fixes | 2d | 2006-07-26 | 2006-07-27 | 179 |  |  | 11d | 0d | finish no earlier than 2006-07-27 | Member | 16h |  |
| 181 | 1.8.12.5.5 | Post to Catalog | 1d | 2006-07-28 | 2006-07-28 | 180 |  |  | 8d |  |  | Component Manager | 8h |  |
| 182 | 1.8.13 | **Search Builder 1.3** | 38d | 2006-06-08 A | 2006-07-31 |  | 61% | 14.71d | 10d | 0d |  |  | 248h | 152h |
| 183 | 1.8.13.1 | Design Posting | 6d | 2006-06-08 A | 2006-06-15 A |  | 100% |  |  |  | start no earlier than 2006-06-08 | Member | 48h | 48h |
| 184 | 1.8.13.2 | Design Review | 4d | 2006-06-16 A | 2006-06-21 A | 183 | 100% |  |  |  | finish no earlier than 2005-03-21 | Member | 32h | 32h |
| 185 | 1.8.13.3 | Design Final Fixes | 2d | 2006-06-22 A | 2006-06-23 A | 184 | 100% |  |  |  |  | Member | 16h | 16h |
| 186 | 1.8.13.4 | Creation of Dev Distro | 1d | 2006-06-26 A | 2006-06-26 A | 185 | 100% |  |  |  |  | Component Manager | 8h | 8h |
| 187 | 1.8.13.5 | Development Posting | 6d | 2006-07-06 A | 2006-07-13 A | 186 | 100% |  |  |  | start no earlier than 2006-07-06 | Member | 48h | 48h |
| 188 | 1.8.13.6 | Development Review | 9d | 2006-07-14 | 2006-07-26 | 187 |  |  | 7d | 0d | finish no earlier than 2006-07-26 | Member | 72h |  |
| 189 | 1.8.13.7 | Development Final Fixes | 2d | 2006-07-27 | 2006-07-28 | 188 |  |  | 7d | 0d | finish no earlier than 2005-04-06 | Member | 16h |  |
| 190 | 1.8.13.8 | Post to Catalog | 1d | 2006-07-31 | 2006-07-31 | 189 |  |  | 7d |  |  | Component Manager | 8h |  |

Notes:
- 166: jmj
- 182: -l

| ID | WBS | Task | Duration | Start | Finish | Predecessors | Complete | Remaining | Total slack | Free slack | Constraint | Resources | Work | Actual work |
| --- | --- | --- | --- | --- | --- | --- | --- | --- | --- | --- | --- | --- | --- | --- |
| 191 | 1.8.14 | **Phase Management** | 40d | 2006-06-08 A | 2006-08-02 |  | 65% | 14d | 8d | 0d |  |  | 320h | 208h |
| 192 | 1.8.14.1 | Design Posting | 6d | 2006-06-08 A | 2006-06-15 A |  | 100% |  |  |  | start no earlier than 2006-06-08 | Member | 48h | 48h |
| 193 | 1.8.14.2 | Design Review | 4d | 2006-06-16 A | 2006-06-21 A | 192 | 100% |  |  |  | finish no earlier than 2005-03-21 | Member | 32h | 32h |
| 194 | 1.8.14.3 | Design Final Fixes | 2d | 2006-06-22 A | 2006-06-23 A | 193 | 100% |  |  |  |  | Member | 16h | 16h |
| 195 | 1.8.14.4 | **Phase Management Development** | 28d | 2006-06-26 A | 2006-08-02 | 194 | 50% | 14d | 8d |  |  |  | 112h | 56h |
| 196 | 1.8.14.4.1 | Creation of Management Dev Distro | 1d | 2006-06-26 A | 2006-06-26 A | 194 | 100% |  |  |  |  | Component Manager | 8h | 8h |
| 197 | 1.8.14.4.2 | Development Posting | 6d | 2006-07-13 A | 2006-07-20 A | 196 | 100% |  |  |  | start no earlier than 2006-07-13 | Member | 48h | 48h |
| 198 | 1.8.14.4.3 | Development Review | 4d | 2006-07-25 | 2006-07-28 | 197 |  |  | 8d | 0d | finish no earlier than 2006-07-28 | Member | 32h |  |
| 199 | 1.8.14.4.4 | Development Final Fixes | 2d | 2006-07-31 | 2006-08-01 | 198 |  |  | 5d | 0d | finish no earlier than 2006-08-01 | Member | 16h |  |
| 200 | 1.8.14.4.5 | Post to Catalog | 1d | 2006-08-02 | 2006-08-02 | 199 |  |  | 5d |  |  | Component Manager | 8h |  |
| 201 | 1.8.14.5 | **Phase Persistence Development** | 28d | 2006-06-26 A | 2006-08-02 |  | 50% | 14d | 8d |  |  |  | 112h | 56h |
| 202 | 1.8.14.5.1 | Creation of Management Dev Distro | 1d | 2006-06-26 A | 2006-06-26 A | 194 | 100% |  |  |  |  | Component Manager | 8h | 8h |
| 203 | 1.8.14.5.2 | Development Posting | 6d | 2006-07-13 A | 2006-07-20 A | 202 | 100% |  |  |  | start no earlier than 2006-07-13 | Member | 48h | 48h |
| 204 | 1.8.14.5.3 | Development Review | 4d | 2006-07-24 | 2006-07-27 | 203 |  |  | 9d | 1d | finish no earlier than 2006-07-27 | Member | 32h |  |
| 205 | 1.8.14.5.4 | Development Final Fixes | 2d | 2006-07-31 | 2006-08-01 | 204 |  |  | 8d | 0d | finish no earlier than 2006-08-01 | Member | 16h |  |
| 206 | 1.8.14.5.5 | Post to Catalog | 1d | 2006-08-02 | 2006-08-02 | 205 |  |  | 5d |  |  | Component Manager | 8h |  |
| 207 | 1.8.15 | **Project Phase Template** | 30d | 2006-06-08 A | 2006-07-19 A |  | 100% |  |  |  |  |  | 208h | 208h |
| 208 | 1.8.15.1 | Design Posting | 6d | 2006-06-08 A | 2006-06-15 A |  | 100% |  |  |  | start no earlier than 2006-06-08 | Member | 48h | 48h |
| 209 | 1.8.15.2 | Design Review | 4d | 2006-06-16 A | 2006-06-21 A | 208 | 100% |  |  |  | finish no earlier than 2005-03-21 | Member | 32h | 32h |
| 210 | 1.8.15.3 | Design Final Fixes | 2d | 2006-06-22 A | 2006-06-23 A | 209 | 100% |  |  |  |  | Member | 16h | 16h |
| 211 | 1.8.15.4 | Creation of Dev Distro | 1d | 2006-06-26 A | 2006-06-26 A | 210 | 100% |  |  |  |  | Component Manager | 8h | 8h |
| 212 | 1.8.15.5 | Development Posting | 6d | 2006-06-29 A | 2006-07-06 A | 211 | 100% |  |  |  | start no earlier than 2006-06-29 | Member | 48h | 48h |
| 213 | 1.8.15.6 | Development Review | 4d | 2006-07-10 A | 2006-07-13 A | 212 | 100% |  |  |  | finish no earlier than 2006-07-13 | Member | 32h | 32h |
| 214 | 1.8.15.7 | Development Final Fixes | 2d | 2006-07-17 A | 2006-07-18 A | 213 | 100% |  |  |  | finish no earlier than 2006-07-18 | Member | 16h | 16h |
| 215 | 1.8.15.8 | Post to Catalog | 1d | 2006-07-19 A | 2006-07-19 A | 214 | 100% |  |  |  |  | Component Manager | 8h | 8h |

Notes:
- 191: ju
- 207: jmj

| ID | WBS | Task | Duration | Start | Finish | Predecessors | Complete | Remaining | Total slack | Free slack | Constraint | Resources | Work | Actual work |
| --- | --- | --- | --- | --- | --- | --- | --- | --- | --- | --- | --- | --- | --- | --- |
| 216 | 1.8.16 | **Online Review Login (custom)** | 39d | 2006-06-08 A | 2006-08-01 |  | 73% | 10.5d | 9d | 0d |  |  | 208h | 152h |
| 217 | 1.8.16.1 | Design Posting | 6d | 2006-06-08 A | 2006-06-15 A |  | 100% |  |  |  | start no earlier than 2006-06-08 | Member | 48h | 48h |
| 218 | 1.8.16.2 | Design Review | 4d | 2006-06-16 A | 2006-06-21 A | 217 | 100% |  |  |  | finish no earlier than 2005-03-21 | Member | 32h | 32h |
| 219 | 1.8.16.3 | Design Final Fixes | 2d | 2006-06-22 A | 2006-06-23 A | 218 | 100% |  |  |  |  | Member | 16h | 16h |
| 220 | 1.8.16.4 | Creation of Dev Distro | 1d | 2006-06-26 A | 2006-06-26 A | 219 | 100% |  |  |  |  | Component Manager | 8h | 8h |
| 221 | 1.8.16.5 | Development Posting | 6d | 2006-07-06 A | 2006-07-13 A | 220 | 100% |  |  |  | start no earlier than 2006-07-06 | Member | 48h | 48h |
| 222 | 1.8.16.6 | Development Review | 4d | 2006-07-24 | 2006-07-27 | 221 |  |  | 9d | 0d | finish no earlier than 2006-07-27 | Member | 32h |  |
| 223 | 1.8.16.7 | Development Final Fixes | 2d | 2006-07-28 | 2006-07-31 | 222 |  |  | 6d | 0d | finish no earlier than 2006-07-25 | Member | 16h |  |
| 224 | 1.8.16.8 | Post to Catalog | 1d | 2006-08-01 | 2006-08-01 | 223 |  |  | 6d |  |  | Component Manager | 8h |  |
| 225 | 1.8.17 | **User Project Data Store (custom)** | 30d | 2006-06-15 A | 2006-07-26 |  | 73% | 8.08d | 13d | 0d |  |  | 208h | 152h |
| 226 | 1.8.17.1 | Design Posting | 6d | 2006-06-15 A | 2006-06-22 A |  | 100% |  |  |  | start no earlier than 2006-06-15 | Member | 48h | 48h |
| 227 | 1.8.17.2 | Design Review | 4d | 2006-06-23 A | 2006-06-28 A | 226 | 100% |  |  |  | finish no earlier than 2005-03-21 | Member | 32h | 32h |
| 228 | 1.8.17.3 | Design Final Fixes | 2d | 2006-06-29 A | 2006-06-30 A | 227 | 100% |  |  |  |  | Member | 16h | 16h |
| 229 | 1.8.17.4 | Creation of Dev Distro | 1d | 2006-07-03 A | 2006-07-03 A | 228 | 100% |  |  |  |  | Component Manager | 8h | 8h |
| 230 | 1.8.17.5 | Development Posting | 6d | 2006-07-06 A | 2006-07-13 A | 229 | 100% |  |  |  | start no earlier than 2006-07-06 | Member | 48h | 48h |
| 231 | 1.8.17.6 | Development Review | 4d | 2006-07-18 | 2006-07-21 | 230 |  |  | 13d | 0d | finish no earlier than 2006-07-21 | Member | 32h |  |
| 232 | 1.8.17.7 | Development Final Fixes | 2d | 2006-07-24 | 2006-07-25 | 231 |  |  | 10d | 0d | finish no earlier than 2005-04-06 | Member | 16h |  |
| 233 | 1.8.17.8 | Post to Catalog | 1d | 2006-07-26 | 2006-07-26 | 232 |  |  | 10d |  |  | Component Manager | 8h |  |
| 234 | 1.8.18 | **Online Review Ajax Support (custom)** | 33d | 2006-06-15 A | 2006-07-31 |  | 73% | 8.88d | 10d | 0d |  |  | 208h | 152h |
| 235 | 1.8.18.1 | Design Posting | 6d | 2006-06-15 A | 2006-06-22 A |  | 100% |  |  |  | start no earlier than 2006-06-15 | Member | 48h | 48h |
| 236 | 1.8.18.2 | Design Review | 4d | 2006-06-23 A | 2006-06-28 A | 235 | 100% |  |  |  | finish no earlier than 2005-03-21 | Member | 32h | 32h |
| 237 | 1.8.18.3 | Design Final Fixes | 2d | 2006-06-29 A | 2006-06-30 A | 236 | 100% |  |  |  |  | Member | 16h | 16h |
| 238 | 1.8.18.4 | Creation of Dev Distro | 1d | 2006-07-03 A | 2006-07-03 A | 237 | 100% |  |  |  |  | Component Manager | 8h | 8h |
| 239 | 1.8.18.5 | Development Posting | 6d | 2006-07-06 A | 2006-07-13 A | 238 | 100% |  |  |  | start no earlier than 2006-07-06 | Member | 48h | 48h |
| 240 | 1.8.18.6 | Development Review | 4d | 2006-07-21 | 2006-07-26 | 239 |  |  | 10d | 0d | finish no earlier than 2006-07-26 | Member | 32h |  |
| 241 | 1.8.18.7 | Development Final Fixes | 2d | 2006-07-27 | 2006-07-28 | 240 |  |  | 7d | 0d | finish no earlier than 2006-07-25 | Member | 16h |  |
| 242 | 1.8.18.8 | Post to Catalog | 1d | 2006-07-31 | 2006-07-31 | 241 |  |  | 7d |  |  | Component Manager | 8h |  |

Notes:
- 216: jmjm
- 234: jmj

| ID | WBS | Task | Duration | Start | Finish | Predecessors | Complete | Remaining | Total slack | Free slack | Constraint | Resources | Work | Actual work |
| --- | --- | --- | --- | --- | --- | --- | --- | --- | --- | --- | --- | --- | --- | --- |
| 243 | 1.8.19 | **Online Review Deliverables (custom)** | 30d | 2006-06-15 A | 2006-07-26 |  | 73% | 8.08d | 13d | 0d |  |  | 208h | 152h |
| 244 | 1.8.19.1 | Design Posting | 6d | 2006-06-15 A | 2006-06-22 A |  | 100% |  |  |  | start no earlier than 2006-06-15 | Member | 48h | 48h |
| 245 | 1.8.19.2 | Design Review | 4d | 2006-06-23 A | 2006-06-28 A | 244 | 100% |  |  |  | finish no earlier than 2005-03-21 | Member | 32h | 32h |
| 246 | 1.8.19.3 | Design Final Fixes | 2d | 2006-06-29 A | 2006-06-30 A | 245 | 100% |  |  |  |  | Member | 16h | 16h |
| 247 | 1.8.19.4 | Creation of Dev Distro | 1d | 2006-07-03 A | 2006-07-03 A | 246 | 100% |  |  |  |  | Component Manager | 8h | 8h |
| 248 | 1.8.19.5 | Development Posting | 6d | 2006-07-06 A | 2006-07-13 A | 247 | 100% |  |  |  | start no earlier than 2006-07-06 | Member | 48h | 48h |
| 249 | 1.8.19.6 | Development Review | 4d | 2006-07-18 | 2006-07-21 | 248 |  |  | 13d | 0d | finish no earlier than 2006-07-21 | Member | 32h |  |
| 250 | 1.8.19.7 | Development Final Fixes | 2d | 2006-07-24 | 2006-07-25 | 249 |  |  | 10d | 0d | finish no earlier than 2006-07-25 | Member | 16h |  |
| 251 | 1.8.19.8 | Post to Catalog | 1d | 2006-07-26 | 2006-07-26 | 250 |  |  | 10d |  |  | Component Manager | 8h |  |
| 252 | 1.8.20 | **Online Review Phases (custom)** | 40d | 2006-06-15 A | 2006-08-09 |  | 61% | 15.71d | 0d |  |  |  | 224h | 136h |
| 253 | 1.8.20.1 | Design Posting | 8d | 2006-06-15 A | 2006-06-26 A |  | 100% |  |  |  | finish no earlier than 2006-06-26 | Member | 64h | 64h |
| 254 | 1.8.20.2 | Design Review | 5d | 2006-06-27 A | 2006-07-03 A | 253 | 100% |  |  |  | start no earlier than 2006-06-27 | Member | 40h | 40h |
| 255 | 1.8.20.3 | Design Final Fixes | 3d | 2006-07-06 A | 2006-07-10 A | 254 | 100% |  |  |  | finish no earlier than 2006-07-10 | Member | 24h | 24h |
| 256 | 1.8.20.4 | Creation of Dev Distro | 1d | 2006-07-11 A | 2006-07-11 A | 255 | 100% |  |  |  |  | Component Manager | 8h | 8h |
| 257 | 1.8.20.5 | Development Posting | 6d | 2006-07-20 | 2006-07-27 | 256 |  |  | 7.5d | 0d | start no earlier than 2006-07-20 | Member | 48h |  |
| 258 | 1.8.20.6 | Development Review | 3d | 2006-07-28 | 2006-08-01 | 257 |  |  | 7.5d | 0d | finish no earlier than 2006-08-01 | Member | 24h |  |
| 259 | 1.8.20.7 | Development Final Fixes | 1d | 2006-08-02 | 2006-08-02 | 258 |  |  | 7.5d |  | start no earlier than 2006-08-02 | Member | 8h |  |
| 260 | 1.8.20.8 | Post to Catalog | 1d | 2006-08-09 | 2006-08-09 | 259 |  |  | 0d |  | finish no earlier than 2006-08-09 | Component Manager | 8h |  |
| 261 | 1.8.21 | **Auto Pilot** | 30d | 2006-06-22 A | 2006-08-02 |  | 70% | 8.89d | 8d | 0d |  |  | 216h | 152h |
| 262 | 1.8.21.1 | Design Posting | 6d | 2006-06-22 A | 2006-06-29 A |  | 100% |  |  |  | start no earlier than 2006-06-22 | Member | 48h | 48h |
| 263 | 1.8.21.2 | Design Review | 4d | 2006-07-03 A | 2006-07-06 A | 262 | 100% |  |  |  | finish no earlier than 2006-07-06 | Member | 32h | 32h |
| 264 | 1.8.21.3 | Design Final Fixes | 2d | 2006-07-10 A | 2006-07-11 A | 263 | 100% |  |  |  | finish no earlier than 2006-07-11 | Member | 16h | 16h |
| 265 | 1.8.21.4 | Creation of Dev Distro | 1d | 2006-07-12 A | 2006-07-12 A | 264 | 100% |  |  |  |  | Component Manager | 8h | 8h |
| 266 | 1.8.21.5 | Development Posting | 6d | 2006-07-13 A | 2006-07-20 A | 265 | 100% |  |  |  | start no earlier than 2005-03-30 | Member | 48h | 48h |
| 267 | 1.8.21.6 | Development Review | 5d | 2006-07-21 | 2006-07-27 | 266 |  |  | 6d | 1d | start no earlier than 2006-07-21 | Member | 40h |  |
| 268 | 1.8.21.7 | Development Final Fixes | 2d | 2006-07-31 | 2006-08-01 | 267 |  |  | 8d | 0d | finish no earlier than 2006-08-01 | Member | 16h |  |
| 269 | 1.8.21.8 | Post to Catalog | 1d | 2006-08-02 | 2006-08-02 | 268 |  |  | 0.5d |  |  | Component Manager | 8h |  |

| ID | WBS | Task | Duration | Start | Finish | Predecessors | Complete | Remaining | Total slack | Free slack | Constraint | Resources | Work | Actual work |
| --- | --- | --- | --- | --- | --- | --- | --- | --- | --- | --- | --- | --- | --- | --- |
| 270 | 1.8.22 | **Auto Screening Tool (2 dev)** | 31d | 2006-06-29 A | 2006-08-10 |  | 47% | 16.53d | 52d |  |  |  | 240h | 112h |
| 271 | 1.8.22.1 | Design Posting | 6d | 2006-06-29 A | 2006-07-06 A |  | 100% |  |  |  | start no earlier than 2006-06-29 | Member | 48h | 48h |
| 272 | 1.8.22.2 | Design Review | 8d | 2006-07-10 A | 2006-07-19 A | 271 | 100% |  |  |  | finish no earlier than 2006-07-13 | Member | 64h | 64h |
| 273 | 1.8.22.3 | Design Final Fixes | 2d | 2006-07-20 | 2006-07-21 | 272 |  |  | 44.5d | 0d | finish no earlier than 2006-07-20 | Member | 16h |  |
| 274 | 1.8.22.4 | Creation of Dev Distro | 1d | 2006-07-24 | 2006-07-24 | 273 |  |  | 44.5d | 0d |  | Component Manager | 8h |  |
| 275 | 1.8.22.5 | Development Posting | 6d | 2006-07-25 | 2006-08-01 | 274 |  |  | 44.5d | 0d | start no earlier than 2005-03-30 | Member | 48h |  |
| 276 | 1.8.22.6 | Development Review | 4d | 2006-08-02 | 2006-08-07 | 275 |  |  | 44.5d | 0d |  | Member | 32h |  |
| 277 | 1.8.22.7 | Development Final Fixes | 2d | 2006-08-08 | 2006-08-09 | 276 |  |  | 44.5d | 0d | finish no earlier than 2005-04-06 | Member | 16h |  |
| 278 | 1.8.22.8 | Post to Catalog | 1d | 2006-08-10 | 2006-08-10 | 277 |  |  | 44.5d |  |  | Component Manager | 8h |  |
| 279 | 1.8.23 | **Auto Screening Management (Custom)** | 30d | 2006-06-15 A | 2006-07-26 |  | 88% | 3.46d | 13d | 0d |  |  | 208h | 184h |
| 280 | 1.8.23.1 | Design Posting | 6d | 2006-06-15 A | 2006-06-22 A |  | 100% |  |  |  | start no earlier than 2006-06-15 | Member | 48h | 48h |
| 281 | 1.8.23.2 | Design Review | 4d | 2006-06-23 A | 2006-06-28 A | 280 | 100% |  |  |  | finish no earlier than 2005-03-21 | Member | 32h | 32h |
| 282 | 1.8.23.3 | Design Final Fixes | 2d | 2006-06-29 A | 2006-06-30 A | 281 | 100% |  |  |  |  | Member | 16h | 16h |
| 283 | 1.8.23.4 | Creation of Dev Distro | 1d | 2006-07-06 A | 2006-07-06 A | 282 | 100% |  |  |  |  | Component Manager | 8h | 8h |
| 284 | 1.8.23.5 | Development Posting | 6d | 2006-07-07 A | 2006-07-14 A | 283 | 100% |  |  |  | start no earlier than 2006-07-13 | Member | 48h | 48h |
| 285 | 1.8.23.6 | Development Review | 4d | 2006-07-17 A | 2006-07-20 A | 284 | 100% |  |  |  |  | Member | 32h | 32h |
| 286 | 1.8.23.7 | Development Final Fixes | 2d | 2006-07-24 | 2006-07-25 | 285 |  |  | 13d | 0d | finish no earlier than 2006-07-25 | Member | 16h |  |
| 287 | 1.8.23.8 | Post to Catalog | 1d | 2006-07-26 | 2006-07-26 | 286 |  |  | 5.5d |  |  | Component Manager | 8h |  |
| 288 | 1.9 | Online Review Change Request #1 | 1d? | 2006-08-10 | 2006-08-10 | 252 |  |  | 49d |  |  | Winning Developer | 8h |  |
| 289 | 1.10 | Change Request #2 | 1d? | 2004-01-27 | 2004-01-27 |  |  |  | 714d |  |  |  |  |  |
| 290 | 1.11 | **Assembly Competitions** | 52d | 2006-06-27 A | 2006-09-07 |  | 22% | 40.48d | 0d |  |  |  | 704h | 168h |
| 291 | 1.11.1 | **Scorecard Admin Assembly** | 44d | 2006-06-27 A | 2006-08-25 |  | 61% | 17.11d | 8d |  |  |  | 248h | 168h |
| 292 | 1.11.1.1 | **Setup** | 16d | 2006-06-27 A | 2006-07-18 A |  | 100% |  |  |  |  |  |  |  |
| 293 | 1.11.1.1.1 | Divide Spec and Arch Deliverables | 3d | 2006-06-27 A | 2006-06-29 A | 82FS-15d, 66FS-15d | 100% |  |  |  | finish no earlier than 2006-06-28 |  |  |  |
| 294 | 1.11.1.1.2 | TopCoder Website Content Creation/Updates | 3d | 2006-07-04 A | 2006-07-06 A | 82FS-10d, 66FS-10d | 100% |  |  |  | finish no earlier than 2006-06-30 |  |  |  |
| 295 | 1.11.1.1.3 | TopCoder Website Informaiton Posted | 1d | 2006-07-11 A | 2006-07-11 A | 82FS-5d, 66FS-5d | 100% |  |  |  | start no earlier than 2006-07-05 |  |  |  |
| 296 | 1.11.1.1.4 | Package Components | 1d | 2006-07-18 A | 2006-07-18 A | 82, 66 | 100% |  |  |  |  |  |  |  |

Notes:
- 279: jmj

| ID | WBS | Task | Duration | Start | Finish | Predecessors | Complete | Remaining | Total slack | Free slack | Constraint | Resources | Work | Actual work | Text1 |
| --- | --- | --- | --- | --- | --- | --- | --- | --- | --- | --- | --- | --- | --- | --- | --- |
| 297 | 1.11.1.2 | **Test Case Development** | 12d | 2006-07-06 A | 2006-07-21 A |  | 100% |  |  |  |  |  | 96h | 96h |  |
| 298 | 1.11.1.2.1 | Submit tests | 11d | 2006-07-06 A | 2006-07-20 A |  | 100% |  |  |  | finish no earlier than 2006-07-20 | test case participants | 88h | 88h |  |
| 299 | 1.11.1.2.2 | Screen test cases | 1d | 2006-07-21 A | 2006-07-21 A | 298 | 100% |  |  |  |  | albertwang (winner) | 8h | 8h |  |
| 300 | 1.11.1.3 | Team Formation | 6d | 2006-07-14 | 2006-07-21 | 295 |  |  | 33d |  | finish no earlier than 2006-07-21 |  |  |  |  |
| 301 | 1.11.1.4 | **Development** | 23d | 2006-07-26 A | 2006-08-25 |  | 46% | 12.32d | 8d |  |  |  | 152h | 72h |  |
| 302 | 1.11.1.4.1 | **Opening Round** | 23d | 2006-07-26 A | 2006-08-25 |  | 46% | 12.32d | 8d |  |  |  | 152h | 72h |  |
| 303 | 1.11.1.4.1.1 | **Team Development** | 9d | 2006-07-26 A | 2006-08-07 A |  | 100% |  |  |  |  |  | 72h | 72h |  |
| 304 | 1.11.1.4.1.1.1 | **Development of Use Cases** | 9d | 2006-07-26 A | 2006-08-07 A |  | 100% |  |  |  |  | All Teams | 72h | 72h | prototype conversion, sequence diagram implementation |
| 305 | 1.11.1.4.1.1.1.1 | Create Unit Tests | 4d | 2006-07-26 A | 2006-07-31 A | 296 | 100% |  |  |  | finish no earlier than 2006-07-31 |  |  |  |  |
| 306 | 1.11.1.4.1.1.1.2 | Convert Prototype | 4d | 2006-07-26 A | 2006-07-31 A | 296 | 100% |  |  |  | finish no earlier than 2006-07-31 |  |  |  |  |
| 307 | 1.11.1.4.1.1.1.3 | Configure components | 3d | 2006-07-27 A | 2006-07-31 A | 296 | 100% |  |  |  | finish no earlier than 2006-07-31 |  |  |  |  |
| 308 | 1.11.1.4.1.1.1.4 | Test | 2d | 2006-08-04 A | 2006-08-07 A | 305, 306, 307 | 100% |  |  |  | finish no earlier than 2006-08-07 |  |  |  |  |
| 309 | 1.11.1.4.1.2 | **Test case challenge** | 2d | 2006-08-08 | 2006-08-09 | 308 |  |  | 8d | 0d |  | All Captains | 24h |  |  |
| 310 | 1.11.1.4.1.2.1 | Submit Challenges | 1d | 2006-08-08 | 2006-08-08 |  |  |  | 8d | 0d | start no earlier than 2006-07-28 |  |  |  |  |
| 311 | 1.11.1.4.1.2.2 | Appeals response | 1d | 2006-08-09 | 2006-08-09 | 310 |  |  | 8d |  |  | albertwang | 8h |  |  |
| 312 | 1.11.1.4.1.3 | **Review** | 13d | 2006-08-09 | 2006-08-25 |  |  |  | 8d |  |  |  | 56h |  |  |
| 313 | 1.11.1.4.1.3.1 | Score Testcases | 1d | 2006-08-09 | 2006-08-09 | 310 |  |  | 10d | 2d |  | DE | 8h |  |  |
| 314 | 1.11.1.4.1.3.2 | Score Submissions | 2d | 2006-08-10 | 2006-08-11 | 309 |  |  | 8d | 0d |  | DE | 16h |  |  |
| 315 | 1.11.1.4.1.3.3 | Review Code | 2d | 2006-08-14 | 2006-08-15 | 313, 314 |  |  | 8d | 0d |  | Review Team | 16h |  |  |
| 316 | 1.11.1.4.1.3.4 | Appeals | 1d | 2006-08-16 | 2006-08-16 | 315 |  |  | 8d | 0d |  | Review Team | 8h |  |  |
| 317 | 1.11.1.4.1.3.5 | Appeals Response | 1d | 2006-08-17 | 2006-08-17 | 316 |  |  | 8d | 0d |  | Review Team | 8h |  |  |
| 318 | 1.11.1.4.1.3.6 | Final Fixes | 3d | 2006-08-18 | 2006-08-22 | 317 |  |  | 8d | 0d |  |  |  |  |  |
| 319 | 1.11.1.4.1.3.7 | Final Review | 1d | 2006-08-23 | 2006-08-23 | 318 |  |  | 8d | 0d |  |  |  |  |  |
| 320 | 1.11.1.4.1.3.8 | Feedback | 2d | 2006-08-24 | 2006-08-25 | 319 |  |  | 8d |  |  |  |  |  |  |

| ID | WBS | Task | Duration | Start | Finish | Predecessors | Complete | Remaining | Total slack | Free slack | Constraint | Resources | Work | Text1 |
| --- | --- | --- | --- | --- | --- | --- | --- | --- | --- | --- | --- | --- | --- | --- |
| 321 | 1.11.2 | **Project Review Assembly** | 35d | 2006-07-20 A | 2006-09-07 |  | 2% | 34.31d | 0d |  |  |  | 232h |  |
| 322 | 1.11.2.1 | **Setup** | 16d | 2006-07-20 A | 2006-08-10 |  | 13% | 14d | 19d |  |  |  |  |  |
| 323 | 1.11.2.1.1 | Divide Spec and Arch Deliverables | 1d | 2006-07-20 A | 2006-07-20 A | 48FS-15d, 57FS-15d, 66FS-15d, 82FS-15d, 91FS-15d, 107FS-15d, 116FS-15d, 125FS-15d, 134FS-15d, 150FS-15d, 166FS-15d, 182FS-15d, 191FS-15d, 207FS-15d, 216FS-15d, 225FS-15d, 234FS-15d, 243FS-15d, 261FS-15d, 279FS-15d | 100% |  |  |  | start no earlier than 2006-07-20 |  |  |  |
| 324 | 1.11.2.1.2 | Topcoder Website Content Created/Updated | 5d | 2006-07-27 | 2006-08-02 | 48FS-10d, 57FS-10d, 66FS-10d, 82FS-10d, 91FS-10d, 107FS-10d, 116FS-10d, 125FS-10d, 134FS-10d, 150FS-10d, 166FS-10d, 182FS-10d, 191FS-10d, 207FS-10d, 216FS-10d, 225FS-10d, 234FS-10d, 243FS-10d, 252FS-10d, 261FS-10d, 279FS-10d |  |  | 25d |  |  |  |  |  |
| 325 | 1.11.2.1.3 | TopCoder Website Informaiton Posted | 1d | 2006-08-03 | 2006-08-03 | 261FS-5d, 48FS-5d, 57FS-5d, 66FS-5d, 82FS-5d, 91FS-5d, 107FS-5d, 116FS-5d, 125FS-5d, 134FS-5d, 150FS-5d, 166FS-5d, 182FS-5d, 191FS-5d, 207FS-5d, 216FS-5d, 225FS-5d, 234FS-5d, 243FS-5d, 252FS-5d, 279FS-5d |  |  | 19d | 0d | start no earlier than 2006-05-17 |  |  |  |
| 326 | 1.11.2.1.4 | Package Components | 1d | 2006-08-10 | 2006-08-10 | 261, 279, 48, 57, 66, 82, 91, 107, 116, 125, 134, 150, 166, 182, 191, 207, 216, 225, 234, 243, 252 |  |  | 0d |  |  |  |  |  |
| 327 | 1.11.2.2 | **Test Case Development** | 8.5d | 2006-07-27 | 2006-08-08 |  |  |  | 21.5d |  |  |  | 64h |  |
| 328 | 1.11.2.2.1 | Submit tests | 8d | 2006-07-27 | 2006-08-07 |  |  |  | 21.5d | 0d | finish no earlier than 2006-08-07 | test case participants | 64h |  |
| 329 | 1.11.2.2.2 | Screen test cases | 0.5d | 2006-08-08 | 2006-08-08 | 328 |  |  | 21.5d |  | start no earlier than 2006-08-08 |  |  |  |
| 330 | 1.11.2.3 | Team Formation | 6d | 2006-08-03 | 2006-08-10 | 325FS-1d |  |  | 19d |  |  |  |  |  |
| 331 | 1.11.2.4 | **Development** | 19d | 2006-08-11 | 2006-09-07 |  |  |  | 0d |  |  |  | 168h |  |
| 332 | 1.11.2.4.1 | **Opening Round** | 19d | 2006-08-11 | 2006-09-07 |  |  |  | 0d |  |  |  | 168h |  |
| 333 | 1.11.2.4.1.1 | **Team Development** | 7d | 2006-08-11 | 2006-08-21 |  |  |  | 0d |  |  |  | 56h |  |
| 334 | 1.11.2.4.1.1.1 | **Development of Use Cases** | 7d | 2006-08-11 | 2006-08-21 |  |  |  | 0d |  |  | All Teams | 56h | prototype conversion, sequence diagram implementation |
| 335 | 1.11.2.4.1.1.1.1 | Create Unit Tests | 4d | 2006-08-11 | 2006-08-16 | 326 |  |  | 0d |  | start no earlier than 2006-03-28 |  |  |  |
| 336 | 1.11.2.4.1.1.1.2 | Convert Prototype | 4d | 2006-08-11 | 2006-08-16 | 326 |  |  | 0d |  | start no earlier than 2006-03-29 |  |  |  |
| 337 | 1.11.2.4.1.1.1.3 | Configure components | 4d | 2006-08-11 | 2006-08-16 | 326 |  |  | 0d |  | start no earlier than 2006-03-29 |  |  |  |
| 338 | 1.11.2.4.1.1.1.4 | Test | 3d | 2006-08-17 | 2006-08-21 | 335, 336, 337 |  |  | 0d |  |  |  |  |  |
| 339 | 1.11.2.4.1.2 | **Test case challenge** | 2d | 2006-08-22 | 2006-08-23 | 338 |  |  | 0d |  |  | All Captains | 56h |  |
| 340 | 1.11.2.4.1.2.1 | Submit Challenges | 1d | 2006-08-22 | 2006-08-22 |  |  |  | 0d |  |  |  |  |  |
| 341 | 1.11.2.4.1.2.2 | Appeals response | 1d | 2006-08-23 | 2006-08-23 | 340 |  |  | 0d |  |  | Reviewer3; Reviewer2; Reviewer1; Assembly Manager; Architect | 40h |  |
| 342 | 1.11.2.4.1.3 | **Review** | 10d | 2006-08-24 | 2006-09-07 |  |  |  | 0d |  |  |  | 56h |  |
| 343 | 1.11.2.4.1.3.1 | Score Testcases | 1d | 2006-08-24 | 2006-08-24 | 339 |  |  | 1d |  |  | DE | 8h |  |
| 344 | 1.11.2.4.1.3.2 | Score Submissions | 2d | 2006-08-24 | 2006-08-25 | 339 |  |  | 0d |  |  | DE | 16h |  |
| 345 | 1.11.2.4.1.3.3 | Review Code | 2d | 2006-08-28 | 2006-08-29 | 343, 344 |  |  | 0d |  |  | Review Team | 16h |  |
| 346 | 1.11.2.4.1.3.4 | Appeals | 1d | 2006-08-30 | 2006-08-30 | 345 |  |  | 0d |  |  | Review Team | 8h |  |
| 347 | 1.11.2.4.1.3.5 | Appeals Response | 1d | 2006-08-31 | 2006-08-31 | 346 |  |  | 0d |  |  | Review Team | 8h |  |
| 348 | 1.11.2.4.1.3.6 | Final Fixes | 3d | 2006-09-01 | 2006-09-06 | 347 |  |  | 0d |  |  |  |  |  |
| 349 | 1.11.2.4.1.3.7 | Final Review | 1d | 2006-09-07 | 2006-09-07 | 348 |  |  | 0d |  |  |  |  |  |

| ID | WBS | Task | Duration | Start | Finish | Predecessors | Total slack | Free slack | Constraint | Resources | Work | Text1 |
| --- | --- | --- | --- | --- | --- | --- | --- | --- | --- | --- | --- | --- |
| 350 | 1.11.3 | **Project Admin and Details Assembly** | 35d | 2006-07-20 | 2006-09-07 |  | 0d |  |  |  | 224h |  |
| 351 | 1.11.3.1 | **Setup** | 16d | 2006-07-20 | 2006-08-10 |  | 15d |  |  |  |  |  |
| 352 | 1.11.3.1.1 | Divide Spec and Arch Deliverables | 1d | 2006-07-20 | 2006-07-20 | 48FS-15d, 57FS-15d, 150FS-15d, 166FS-15d, 182FS-15d, 191FS-15d, 207FS-15d, 216FS-15d, 225FS-15d, 234FS-15d, 243FS-15d, 252FS-15d, 279FS-15d, 66FS-15d, 82FS-15d, 91FS-15d, 107FS-15d, 116FS-15d, 125FS-15d, 134FS-15d | 34d |  | start no earlier than 2006-07-20 |  |  |  |
| 353 | 1.11.3.1.2 | TopCoder Website Content Creation | 5d | 2006-07-27 | 2006-08-02 | 261FS-10d, 279FS-10d, 48FS-10d, 57FS-10d, 66FS-10d, 82FS-10d, 91FS-10d, 107FS-10d, 116FS-10d, 125FS-10d, 134FS-10d, 150FS-10d, 166FS-10d, 182FS-10d, 191FS-10d, 207FS-10d, 216FS-10d, 225FS-10d, 234FS-10d, 243FS-10d, 252FS-10d | 25d |  |  |  |  |  |
| 354 | 1.11.3.1.3 | TopCoder Website Informaiton Posted | 1d | 2006-08-03 | 2006-08-03 | 261FS-5d, 279FS-5d, 48FS-5d, 57FS-5d, 66FS-5d, 82FS-5d, 91FS-5d, 107FS-5d, 116FS-5d, 125FS-5d, 134FS-5d, 150FS-5d, 166FS-5d, 182FS-5d, 191FS-5d, 207FS-5d, 216FS-5d, 225FS-5d, 234FS-5d, 243FS-5d, 252FS-5d | 19d | 0d | start no earlier than 2006-05-17 |  |  |  |
| 355 | 1.11.3.1.4 | Package Components | 1d | 2006-08-10 | 2006-08-10 | 261, 279, 48, 57, 66, 82, 91, 107, 116, 125, 134, 150, 166, 182, 191, 207, 216, 225, 234, 243, 252 | 0d |  |  |  |  |  |
| 356 | 1.11.3.2 | **Test Case Development** | 8d | 2006-07-28 | 2006-08-08 |  | 24d |  |  |  | 56h |  |
| 357 | 1.11.3.2.1 | Submit tests | 7d | 2006-07-28 | 2006-08-07 |  | 24d | 0d | start no earlier than 2006-07-28 | test case participants | 56h |  |
| 358 | 1.11.3.2.2 | Screen test cases | 1d | 2006-08-08 | 2006-08-08 | 357 | 24d |  |  |  |  |  |
| 359 | 1.11.3.3 | Team Formation | 5d | 2006-08-04 | 2006-08-10 | 354 | 19d |  |  |  |  |  |
| 360 | 1.11.3.4 | **Development** | 19d | 2006-08-11 | 2006-09-07 |  | 0d |  |  |  | 168h |  |
| 361 | 1.11.3.4.1 | **Opening Round** | 19d | 2006-08-11 | 2006-09-07 |  | 0d |  |  |  | 168h |  |
| 362 | 1.11.3.4.1.1 | **Team Development** | 7d | 2006-08-11 | 2006-08-21 |  | 0d |  |  |  | 56h |  |
| 363 | 1.11.3.4.1.1.1 | **Development of Use Cases** | 7d | 2006-08-11 | 2006-08-21 |  | 0d |  |  | All Teams | 56h | prototype conversion, sequence diagram implementation |
| 364 | 1.11.3.4.1.1.1.1 | Create Unit Tests | 4d | 2006-08-11 | 2006-08-16 | 355 | 0d |  | start no earlier than 2006-03-28 |  |  |  |
| 365 | 1.11.3.4.1.1.1.2 | Convert Prototype | 4d | 2006-08-11 | 2006-08-16 | 355 | 0d |  | start no earlier than 2006-03-29 |  |  |  |
| 366 | 1.11.3.4.1.1.1.3 | Configure components | 4d | 2006-08-11 | 2006-08-16 | 355 | 0d |  | start no earlier than 2006-03-29 |  |  |  |
| 367 | 1.11.3.4.1.1.1.4 | Test | 3d | 2006-08-17 | 2006-08-21 | 364, 365, 366 | 0d |  |  |  |  |  |
| 368 | 1.11.3.4.1.2 | **Test case challenge** | 2d | 2006-08-22 | 2006-08-23 | 367 | 0d |  |  | All Captains | 56h |  |
| 369 | 1.11.3.4.1.2.1 | Submit Challenges | 1d | 2006-08-22 | 2006-08-22 |  | 0d |  |  |  |  |  |
| 370 | 1.11.3.4.1.2.2 | Appeals response | 1d | 2006-08-23 | 2006-08-23 | 369 | 0d |  |  | Reviewer3; Reviewer2; Reviewer1; Assembly Manager; Architect | 40h |  |
| 371 | 1.11.3.4.1.3 | **Review** | 10d | 2006-08-24 | 2006-09-07 |  | 0d |  |  |  | 56h |  |
| 372 | 1.11.3.4.1.3.1 | Score Testcases | 1d | 2006-08-24 | 2006-08-24 | 368 | 1d |  |  | DE | 8h |  |
| 373 | 1.11.3.4.1.3.2 | Score Submissions | 2d | 2006-08-24 | 2006-08-25 | 368 | 0d |  |  | DE | 16h |  |
| 374 | 1.11.3.4.1.3.3 | Review Code | 2d | 2006-08-28 | 2006-08-29 | 372, 373 | 0d |  |  | Review Team | 16h |  |
| 375 | 1.11.3.4.1.3.4 | Appeals | 1d | 2006-08-30 | 2006-08-30 | 374 | 0d |  |  | Review Team | 8h |  |
| 376 | 1.11.3.4.1.3.5 | Appeals Response | 1d | 2006-08-31 | 2006-08-31 | 375 | 0d |  |  | Review Team | 8h |  |
| 377 | 1.11.3.4.1.3.6 | Final Fixes | 3d | 2006-09-01 | 2006-09-06 | 376 | 0d |  |  |  |  |  |
| 378 | 1.11.3.4.1.3.7 | Final Review | 1d | 2006-09-07 | 2006-09-07 | 377 | 0d |  |  |  |  |  |

| ID | WBS | Task | Duration | Start | Finish | Predecessors | Complete | Remaining | Total slack | Free slack | Constraint | Resources | Work |
| --- | --- | --- | --- | --- | --- | --- | --- | --- | --- | --- | --- | --- | --- |
| 379 | 1.12 | **Migration Assembly** | 26d? | 2006-07-31 A | 2006-09-05 |  | 6% | 24.38d? | 32d |  |  |  | 240h |
| 380 | 1.12.1 | Update Warehouse Load Script | 2d | 2006-07-31 | 2006-08-01 |  |  |  | 56d |  | start no earlier than 2006-07-31 | brain_cn | 16h |
| 381 | 1.12.2 | Create List of Deprecated Tables in TCS_CATALOG | 1d? | 2006-08-02 A | 2006-08-02 A | 380 | 100% |  |  |  |  |  |  |
| 382 | 1.12.3 | Create Drop and Alter Tables Script for TCS_CATALOG | 1d? | 2006-08-03 A | 2006-08-03 A | 381 | 100% |  |  |  |  |  |  |
| 383 | 1.12.4 | Create Conversion Scripts (from old OR Tables to New) | 5d | 2006-08-04 | 2006-08-10 | 382 |  |  | 32d | 0d |  | brain_cn | 40h |
| 384 | 1.12.5 | Integrate Events to populate project_results table | 2d | 2006-08-11 | 2006-08-14 | 383 |  |  | 32d | 0d |  | brain_cn | 16h |
| 385 | 1.12.6 | **Update Content Pages** | 7d | 2006-08-15 | 2006-08-23 |  |  |  | 32d | 0d |  |  | 56h |
| 386 | 1.12.6.1 | Update Active Contest Page | 1d | 2006-08-15 | 2006-08-15 | 384 |  |  | 32d | 0d |  | brain_cn | 8h |
| 387 | 1.12.6.2 | Update Contest Status Page | 1d | 2006-08-16 | 2006-08-16 | 386 |  |  | 32d | 0d |  | brain_cn | 8h |
| 388 | 1.12.6.3 | Display Scorecards | 1d | 2006-08-17 | 2006-08-17 | 387 |  |  | 32d | 0d |  | brain_cn | 8h |
| 389 | 1.12.6.4 | Send Component Project Information | 1d | 2006-08-18 | 2006-08-18 | 388 |  |  | 32d | 0d |  | brain_cn | 8h |
| 390 | 1.12.6.5 | Send Competitor Registration | 1d | 2006-08-21 | 2006-08-21 | 389 |  |  | 32d | 0d |  | brain_cn | 8h |
| 391 | 1.12.6.6 | Send Reviewer Registration | 1d | 2006-08-22 | 2006-08-22 | 390 |  |  | 32d | 0d |  | brain_cn | 8h |
| 392 | 1.12.6.7 | Send Data to Warehouse | 1d | 2006-08-23 | 2006-08-23 | 391 |  |  | 32d | 0d |  | brain_cn | 8h |
| 393 | 1.12.7 | Test Case Development | 5d | 2006-08-24 | 2006-08-30 | 392 |  |  | 34d | 0d | start no earlier than 2006-07-27 | brain_cn | 40h |
| 394 | 1.12.8 | Test Case Review | 1d | 2006-08-31 | 2006-08-31 | 393 |  |  | 34d |  |  |  |  |
| 395 | 1.12.9 | Integration with On-Site Plasma Scoreboard | 2d | 2006-08-24 | 2006-08-25 | 385 |  |  | 32d | 0d |  |  |  |
| 396 | 1.12.10 | **Certification** | 6d | 2006-08-28 | 2006-09-05 |  |  |  | 32d |  |  |  | 72h |
| 397 | 1.12.10.1 | Deployment To TopCoder QA | 2d | 2006-08-28 | 2006-08-29 | 395 |  |  | 32d | 0d |  | brain_cn; Dan Ulery | 32h |
| 398 | 1.12.10.2 | **Testing Iteration** | 3d | 2006-08-30 | 2006-09-01 |  |  |  | 32d |  |  |  | 32h |
| 399 | 1.12.10.2.1 | Test Plan Execution | 1d | 2006-08-30 | 2006-08-30 | 397 |  |  | 32d | 0d |  | Dan Ulery; brain_cn | 16h |
| 400 | 1.12.10.2.2 | Application Bu Fixes, Implemeted | 2d | 2006-08-31 | 2006-09-01 | 399 |  |  | 32d | 0d |  | brain_cn | 16h |
| 401 | 1.12.10.3 | Project Manager Certification | 1d | 2006-09-05 | 2006-09-05 | 400 |  |  | 32d |  |  | lorienorman | 8h |
| 402 | 1.13 | **Deployment** | 48d | 2006-07-24 | 2006-09-28 |  |  |  | 15d |  |  |  | 192h |
| 403 | 1.13.1 | Set up QA Environment (database, apache, jboss) | 3d | 2006-07-24 | 2006-07-26 |  |  |  | 63d |  | start no earlier than 2006-07-24 | Dan Ulery | 24h |

| ID | WBS | Task | Type | Duration | Start | Finish | Predecessors | Total slack | Free slack | Constraint | Resources | Work |
| --- | --- | --- | --- | --- | --- | --- | --- | --- | --- | --- | --- | --- |
| 404 | 1.13.2 | **Deployment to QA** |  | 14d | 2006-09-08 | 2006-09-27 |  | 14d | 0d |  |  | 168h |
| 405 | 1.13.2.1 | Merge code and deploy to QA |  | 4d | 2006-09-08 | 2006-09-13 | 290 | 14d | 0d | finish no earlier than 2005-05-27 | Project Manager; Application Assembler 1 | 64h |
| 406 | 1.13.2.2 | **Testing Iteration** |  | 10d | 2006-09-14 | 2006-09-27 |  | 14d |  |  |  | 104h |
| 407 | 1.13.2.2.1 | Test Plan Execution |  | 4d | 2006-09-14 | 2006-09-19 | 405 | 14d | 0d | finish no earlier than 2005-06-03 | Project Manager; Application Assembler 1 | 64h |
| 408 | 1.13.2.2.2 | User Acceptance Testing | milestone | 5d | 2006-09-20 | 2006-09-26 | 407 | 14d | 0d | finish no earlier than 2005-06-03 | Customer | 40h |
| 409 | 1.13.2.2.3 | PM Certification |  | 1d | 2006-09-27 | 2006-09-27 | 408 | 14d |  |  |  |  |
| 410 | 1.13.3 | **Deployment to Production** |  | 1d | 2006-09-28 | 2006-09-28 |  | 14d | 0d |  |  |  |
| 411 | 1.13.3.1 | Deployment |  | 1d | 2006-09-28 | 2006-09-28 | 404 | 14d |  |  |  |  |
| 412 | 1.14 | **Support** |  | 30d | 2006-09-08 | 2006-10-19 |  | 0d |  |  |  | 240h |
| 413 | 1.14.1 | Capture DRs |  | 15d | 2006-09-08 | 2006-09-28 | 290 | 0d |  |  | Project Manager | 120h |
| 414 | 1.14.2 | Release Fix |  | 15d | 2006-09-29 | 2006-10-19 | 413 | 0d |  |  | Project Manager | 120h |
| 415 | 1.15 | Send out how-to info to users |  | 1d | 2006-09-29 | 2006-09-29 | 410 | 14d |  |  |  |  |
| 416 | 1.16 | Beta Release to internal users |  | 1d | 2006-09-29 | 2006-09-29 | 410 | 14d |  |  |  |  |
