# TopCoder Software Project Plan

Schedule from MS Project, 2005-06-29 to 2006-09-29, A marks actual dates.
TopCoder Software Project Plan
TopCoder

## Calendars

- Standard: Mon-Fri 08:00-12:00, 13:00-17:00; Sat-Sun off. Exceptions (off unless hours are given): 2006-09-04.

## Resources

| Resource |
| --- |
| Project Manager |
| Component Architect |
| Information Architect |
| Component Manager |
| Application Architect |
| Application Assembler 1 |
| Deployment Engineer 1 |
| Customer |
| Member |
| Review |
| Application Assembler 4 |
| Application Assembler 3 |
| Application Assembler 2 |
| Deployment Engineer 3 |
| Deployment Engineer 2 |
| Deployment Engineer |
| Deployment Engineer/Project Manager |
| Javier |
| Greg Paul |
| Dave Messinger |
| Lorie Norman |
| Tony Jefts |
| test case participants |
| All Teams |
| All Captains |
| Reviewer3 |
| Reviewer2 |
| Reviewer1 |
| Assembly Manager |
| Architect |
| DE |
| Review Team |
| Kim Ruhl |
| Petar Canic |
| WishingBone |
| Brian Chang |
| Dean Brodrick |

## Schedule

| ID | WBS | Task | Type | Duration | Start | Finish | Predecessors | Complete | Remaining | Baseline start | Baseline finish | Baseline duration | Total slack | Constraint | Resources | Work | Actual work |
| --- | --- | --- | --- | --- | --- | --- | --- | --- | --- | --- | --- | --- | --- | --- | --- | --- | --- |
| 1 | 1 | **TopCoder Online Review/Scorecard Project** |  | 327d? | 2005-06-29 A | 2006-09-29 |  | 15% | 278.9d? |  |  |  | 0d |  |  | 7816h | 1256h |
| 2 | 1.1 | Kick Off Meeting |  | 0.33d? | 2006-03-02 | 2006-03-02 |  |  |  |  |  |  | 139.67d | start no earlier than 2006-03-02 | Dave Messinger; Lorie Norman; Tony Jefts | 8h |  |
| 3 | 1.2 | Creation of TopCoder Application Forum |  | 1d | 2006-03-02 A | 2006-03-03 A | 2 | 100% |  |  |  |  |  | start no earlier than 2005-06-29 | Lorie Norman | 8h | 8h |
| 4 | 1.3 | Assign Client Permissions to Forums |  | 1d | 2006-03-02 A | 2006-03-02 A |  | 100% |  |  |  |  |  | start no earlier than 2005-06-29 | Lorie Norman | 8h | 8h |
| 5 | 1.4 | Create SVN module for Application |  | 1d | 2005-06-29 A | 2005-06-29 A |  | 100% |  |  |  |  |  | start no earlier than 2005-06-29 | Lorie Norman | 8h | 8h |
| 6 | 1.5 | Key Stakeholder Meetings |  | 1.5d | 2006-03-06 A | 2006-03-07 A |  | 100% |  |  |  |  |  | start no earlier than 2006-03-06 | Greg Paul; Javier; Dave Messinger; Lorie Norman | 48h | 48h |
| 7 | 1.6 | **Application Specification** |  | 33.5d? | 2006-03-02 A | 2006-04-18 A |  | 100% |  | 2004-01-20 | 2004-02-11 | 17d? |  |  |  | 280h | 280h |
| 8 | 1.6.1 | **Requirement Specification Draft** |  | 1d | 2006-03-03 A | 2006-03-03 A |  | 100% |  | 2004-01-20 | 2004-01-22 | 3d? |  |  | Lorie Norman | 8h | 8h |
| 9 | 1.6.1.1 | Fill in Scope |  | 1d | 2006-03-03 A | 2006-03-03 A |  | 100% |  |  |  |  |  | start no earlier than 2006-03-03 |  |  |  |
| 10 | 1.6.2 | Review Meeting |  | 0.5d | 2006-03-06 A | 2006-03-06 A | 8 | 100% |  | 2004-01-23 | 2004-01-23 | 1d? |  |  | Project Manager; Customer | 8h | 8h |
| 11 | 1.6.3 | Create/Update Use Cases |  | 2d | 2006-03-02 A | 2006-03-03 A |  | 100% |  |  |  |  |  | start no earlier than 2006-03-02 |  |  |  |
| 12 | 1.6.4 | **Module Specification** |  | 18.5d | 2006-03-09 A | 2006-04-04 A |  | 100% |  | 2004-01-23 | 2004-02-11 | 14d? |  |  |  | 80h | 80h |
| 13 | 1.6.4.1 | Create/Update Activity Diagram |  | 10d | 2006-03-15 A | 2006-03-28 A | 10 | 100% |  |  |  |  |  | finish no earlier than 2006-03-28 | Project Manager | 80h | 80h |
| 14 | 1.6.4.2 | Fill in Logic Requirements for use cases and activity diagrams |  | 5d | 2006-03-09 A | 2006-04-03 A | 13 | 100% |  |  |  |  |  |  |  |  |  |
| 15 | 1.6.4.3 | Review Meeting |  | 1d | 2006-04-04 A | 2006-04-04 A | 14 | 100% |  |  |  |  |  | start no earlier than 2006-03-10 |  |  |  |
| 16 | 1.6.5 | Create Site Map |  | 1d? | 2006-04-04 A | 2006-04-04 A |  | 100% |  |  |  |  |  | start no earlier than 2006-04-04 |  |  |  |
| 17 | 1.6.6 | Review Meeting |  | 0.5d | 2006-04-03 A | 2006-04-03 A |  | 100% |  |  |  |  |  | start no earlier than 2006-04-03 |  |  |  |
| 18 | 1.6.7 | Prototype Revision 1 |  | 14d | 2006-03-20 A | 2006-04-06 A |  | 100% |  |  |  |  |  | finish no earlier than 2006-04-06 | Kim Ruhl | 112h | 112h |
| 19 | 1.6.8 | Architecture Diagram Draft |  | 1d | 2006-03-22 A | 2006-03-23 A | 17 | 100% |  | 2004-01-27 | 2004-01-28 | 2d? |  | start no earlier than 2005-01-19 | Project Manager | 8h | 8h |
| 20 | 1.6.9 | Fill in Technical Requirements |  | 0.5d | 2006-04-04 A | 2006-04-04 A | 19 | 100% |  |  |  |  |  | start no earlier than 2006-04-04 |  |  |  |
| 21 | 1.6.10 | Review Meeting |  | 2d | 2006-04-07 A | 2006-04-10 A | 18 | 100% |  | 2004-01-30 | 2004-01-30 | 1d? |  | start no earlier than 2006-04-07 | Project Manager; Customer | 32h | 32h |
| 22 | 1.6.11 | Prototype Revision 2 Review |  | 2d | 2006-04-11 A | 2006-04-12 A | 21 | 100% |  |  |  |  |  | start no earlier than 2006-04-11 |  |  |  |
| 23 | 1.6.12 | Complete QA Plan |  | 1d | 2006-04-05 A | 2006-04-05 A | 12 | 100% |  |  |  |  |  |  |  |  |  |
| 24 | 1.6.13 | Review Meeting |  | 0.5d | 2006-04-13 A | 2006-04-13 A | 22 | 100% |  | 2004-02-06 | 2004-02-06 | 1d? |  |  | Project Manager; Customer | 8h | 8h |
| 25 | 1.6.14 | Update Final Specification Deliverables |  | 2d | 2006-04-13 A | 2006-04-17 A | 24 | 100% |  | 2004-02-09 | 2004-02-10 | 2d? |  | start no earlier than 2006-04-06 | Project Manager | 16h | 16h |
| 26 | 1.6.15 | Final Specification Presentation | milestone | 1d? | 2006-04-17 A | 2006-04-18 A | 25 | 100% |  | 2004-02-11 | 2004-02-11 | 1d? |  |  | Project Manager | 8h | 8h |

Notes:
- 12: This will be iterated over multiple times for each module.

| ID | WBS | Task | Type | Duration | Start | Finish | Predecessors | Complete | Remaining | Total slack | Free slack | Constraint | Resources | Work | Actual work |
| --- | --- | --- | --- | --- | --- | --- | --- | --- | --- | --- | --- | --- | --- | --- | --- |
| 27 | 1.7 | **Application Architecture** |  | 35.5d | 2006-04-18 A | 2006-06-06 |  | 99% | 0.42d | 82d |  |  |  | 728h | 712h |
| 28 | 1.7.1 | Test Scenarios |  | 10d | 2006-05-08 A | 2006-05-19 A | 23 | 100% |  |  |  | start no earlier than 2006-05-08 | Dean Brodrick | 80h | 80h |
| 29 | 1.7.2 | Update Site Map |  | 5d | 2006-04-18 A | 2006-04-25 A | 7 | 100% |  |  |  |  | Kim Ruhl; Petar Canic | 80h | 80h |
| 30 | 1.6.3 | Physical Data Model Definition |  | 5d | 2006-04-18 A | 2006-04-25 A | 7 | 100% |  |  |  | finish no earlier than 2005-02-04 | WishingBone | 40h | 40h |
| 31 | 1.7.4 | **UML Diagrams** |  | 32d | 2006-04-20 A | 2006-06-02 A |  | 100% |  |  |  |  |  | 464h | 464h |
| 32 | 1.6.2 | Component Sequence Diagrams |  | 31d | 2006-04-20 A | 2006-06-01 A |  | 100% |  |  |  | finish no earlier than 2006-06-01 | WishingBone | 248h | 248h |
| 33 | 1.6.1 | Component Interface Diagram |  | 25d | 2006-05-01 A | 2006-06-02 A |  | 100% |  |  |  | finish no earlier than 2006-06-02 | WishingBone | 200h | 200h |
| 34 | 1.7.4.3 | Component Diagram |  | 2d | 2006-05-25 A | 2006-05-26 A |  | 100% |  |  |  | finish no earlier than 2006-05-28 | WishingBone | 16h | 16h |
| 35 | 1.6.5 | Component Specifications | milestone | 5d | 2006-05-29 A | 2006-06-02 A |  | 100% |  |  |  | finish no earlier than 2006-06-02 | Component Architect | 40h | 40h |
| 36 | 1.7.6 | Application Design Specification |  | 1d | 2006-06-05 A | 2006-06-05 A | 35 | 100% |  |  |  | finish no earlier than 2006-06-02 | Component Architect | 8h | 8h |
| 37 | 1.7.7 | Review |  | 1d | 2006-06-06 | 2006-06-06 | 36 |  |  | 71d |  |  | Project Manager; Component Architect | 16h |  |
| 38 | 1.8 | **Component Production** |  | 41d | 2006-05-25 A | 2006-07-20 |  | 4% | 39.56d | 0d |  |  |  | 5472h | 192h |
| 39 | 1.8.1 | **File Upload 2.0** |  | 29d | 2006-05-25 A | 2006-07-04 |  | 43% | 16.57d | 12d |  |  |  | 224h | 96h |
| 40 | 1.8.1.1 | Design Posting |  | 6d | 2006-05-25 A | 2006-06-01 A |  | 100% |  |  |  | start no earlier than 2006-05-25 | Member | 48h | 48h |
| 41 | 1.8.1.2 | Design Review |  | 6d | 2006-06-02 A | 2006-06-09 A | 40 | 100% |  |  |  | finish no earlier than 2005-03-21 | Member | 48h | 48h |
| 42 | 1.8.1.3 | Design Final Fixes |  | 2d | 2006-06-12 | 2006-06-13 | 41 |  |  | 13d | 1d |  | Member | 16h |  |
| 43 | 1.8.1.4 | Creation of Dev Distro |  | 1d | 2006-06-15 | 2006-06-15 | 42 |  |  | 12d | 0d | finish no earlier than 2006-06-15 | Component Manager | 8h |  |
| 44 | 1.8.1.5 | Development Posting |  | 6d | 2006-06-16 | 2006-06-23 | 43 |  |  | 12d | 0d | start no earlier than 2005-03-30 | Member | 48h |  |
| 45 | 1.8.1.6 | Development Review |  | 4d | 2006-06-26 | 2006-06-29 | 44 |  |  | 12d | 0d |  | Member | 32h |  |
| 46 | 1.8.1.7 | Development Final Fixes |  | 2d | 2006-06-30 | 2006-07-03 | 45 |  |  | 12d | 0d | finish no earlier than 2005-04-06 | Member | 16h |  |
| 47 | 1.8.1.8 | Post to Catalog |  | 1d | 2006-07-04 | 2006-07-04 | 46 |  |  | 12d |  |  | Component Manager | 8h |  |
| 48 | 1.8.2 | **Cached Web Element Tag** |  | 26d | 2006-05-25 A | 2006-06-29 |  | 23% | 20d | 15d |  |  |  | 208h | 48h |
| 49 | 1.8.2.1 | Design Posting |  | 6d | 2006-05-25 A | 2006-06-01 A |  | 100% |  |  |  | start no earlier than 2006-05-25 | Member | 48h | 48h |
| 50 | 1.8.2.2 | Design Review |  | 4d | 2006-06-02 | 2006-06-07 | 49 |  |  | 54d | 0d | finish no earlier than 2005-03-21 | Member | 32h |  |
| 51 | 1.8.2.3 | Design Final Fixes |  | 2d | 2006-06-08 | 2006-06-09 | 50 |  |  | 54d | 0d |  | Member | 16h |  |
| 52 | 1.8.2.4 | Creation of Dev Distro |  | 1d | 2006-06-12 | 2006-06-12 | 51 |  |  | 54d | 0d |  | Component Manager | 8h |  |
| 53 | 1.8.2.5 | Development Posting |  | 6d | 2006-06-13 | 2006-06-20 | 52 |  |  | 54d | 0d | start no earlier than 2005-03-30 | Member | 48h |  |
| 54 | 1.8.2.6 | Development Review |  | 4d | 2006-06-21 | 2006-06-26 | 53 |  |  | 54d | 0d |  | Member | 32h |  |
| 55 | 1.8.2.7 | Development Final Fixes |  | 2d | 2006-06-27 | 2006-06-28 | 54 |  |  | 54d | 0d | finish no earlier than 2005-04-06 | Member | 16h |  |
| 56 | 1.8.2.8 | Post to Catalog |  | 1d | 2006-06-29 | 2006-06-29 | 55 |  |  | 54d |  |  | Component Manager | 8h |  |

| ID | WBS | Task | Duration | Start | Finish | Predecessors | Complete | Remaining | Total slack | Free slack | Constraint | Resources | Work | Actual work |
| --- | --- | --- | --- | --- | --- | --- | --- | --- | --- | --- | --- | --- | --- | --- |
| 57 | 1.8.3 | **Database Abstraction 1.1** | 26d | 2006-05-25 A | 2006-06-29 |  | 23% | 20d | 15d |  |  |  | 208h | 48h |
| 58 | 1.8.3.1 | Design Posting | 6d | 2006-05-25 A | 2006-06-01 A |  | 100% |  |  |  | start no earlier than 2006-05-25 | Member | 48h | 48h |
| 59 | 1.8.3.2 | Design Review | 4d | 2006-06-02 | 2006-06-07 | 58 |  |  | 54d | 0d | finish no earlier than 2005-03-21 | Member | 32h |  |
| 60 | 1.8.3.3 | Design Final Fixes | 2d | 2006-06-08 | 2006-06-09 | 59 |  |  | 54d | 0d |  | Member | 16h |  |
| 61 | 1.8.3.4 | Creation of Dev Distro | 1d | 2006-06-12 | 2006-06-12 | 60 |  |  | 54d | 0d |  | Component Manager | 8h |  |
| 62 | 1.8.3.5 | Development Posting | 6d | 2006-06-13 | 2006-06-20 | 61 |  |  | 54d | 0d | start no earlier than 2005-03-30 | Member | 48h |  |
| 63 | 1.8.3.6 | Development Review | 4d | 2006-06-21 | 2006-06-26 | 62 |  |  | 54d | 0d |  | Member | 32h |  |
| 64 | 1.8.3.7 | Development Final Fixes | 2d | 2006-06-27 | 2006-06-28 | 63 |  |  | 54d | 0d | finish no earlier than 2005-04-06 | Member | 16h |  |
| 65 | 1.8.3.8 | Post to Catalog | 1d | 2006-06-29 | 2006-06-29 | 64 |  |  | 54d |  |  | Component Manager | 8h |  |
| 66 | 1.8.4 | **Scorecard Management (2 dev)** | 26d | 2006-06-01 | 2006-07-06 |  |  |  | 10d | 0d |  |  | 320h |  |
| 67 | 1.8.4.1 | Design Posting | 6d | 2006-06-01 | 2006-06-08 |  |  |  | 10d | 0d | start no earlier than 2006-06-01 | Member | 48h |  |
| 68 | 1.8.4.2 | Design Review | 4d | 2006-06-09 | 2006-06-14 | 67 |  |  | 10d | 0d | finish no earlier than 2005-03-21 | Member | 32h |  |
| 69 | 1.8.4.3 | Design Final Fixes | 2d | 2006-06-15 | 2006-06-16 | 68 |  |  | 10d | 0d |  | Member | 16h |  |
| 70 | 1.8.4.4 | **Scorecard Management Development** | 14d | 2006-06-19 | 2006-07-06 | 69 |  |  | 10d |  |  |  | 112h |  |
| 71 | 1.8.4.4.1 | Creation of Management Dev Distro | 1d | 2006-06-19 | 2006-06-19 | 69 |  |  | 10d | 0d |  | Component Manager | 8h |  |
| 72 | 1.8.4.4.2 | Development Posting | 6d | 2006-06-20 | 2006-06-27 | 71 |  |  | 10d | 0d | start no earlier than 2005-03-30 | Member | 48h |  |
| 73 | 1.8.4.4.3 | Development Review | 4d | 2006-06-28 | 2006-07-03 | 72 |  |  | 10d | 0d |  | Member | 32h |  |
| 74 | 1.8.4.4.4 | Development Final Fixes | 2d | 2006-07-04 | 2006-07-05 | 73 |  |  | 10d | 0d | finish no earlier than 2005-04-06 | Member | 16h |  |
| 75 | 1.8.4.4.5 | Post to Catalog | 1d | 2006-07-06 | 2006-07-06 | 74 |  |  | 10d |  |  | Component Manager | 8h |  |
| 76 | 1.8.4.5 | **Scorecard Persistence Development** | 14d | 2006-06-19 | 2006-07-06 |  |  |  | 10d |  |  |  | 112h |  |
| 77 | 1.8.4.5.1 | Creation of Management Dev Distro | 1d | 2006-06-19 | 2006-06-19 | 69 |  |  | 13d |  |  | Component Manager | 8h |  |
| 78 | 1.8.4.5.2 | Development Posting | 6d | 2006-06-20 | 2006-06-27 | 71 |  |  | 7d |  | start no earlier than 2005-03-30 | Member | 48h |  |
| 79 | 1.8.4.5.3 | Development Review | 4d | 2006-06-28 | 2006-07-03 | 72 |  |  | 3d |  |  | Member | 32h |  |
| 80 | 1.8.4.5.4 | Development Final Fixes | 2d | 2006-07-04 | 2006-07-05 | 73 |  |  | 1d |  | finish no earlier than 2005-04-06 | Member | 16h |  |
| 81 | 1.8.4.5.5 | Post to Catalog | 1d | 2006-07-06 | 2006-07-06 | 74 |  |  | 10d |  |  | Component Manager | 8h |  |

| ID | WBS | Task | Duration | Start | Finish | Predecessors | Total slack | Free slack | Constraint | Resources | Work |
| --- | --- | --- | --- | --- | --- | --- | --- | --- | --- | --- | --- |
| 82 | 1.8.5 | **Scorecard Data Structure** | 26d | 2006-06-01 | 2006-07-06 |  | 10d | 0d |  |  | 208h |
| 83 | 1.8.5.1 | Design Posting | 6d | 2006-06-01 | 2006-06-08 |  | 10d | 0d | start no earlier than 2006-06-01 | Member | 48h |
| 84 | 1.8.5.2 | Design Review | 4d | 2006-06-09 | 2006-06-14 | 83 | 10d | 0d | finish no earlier than 2005-03-21 | Member | 32h |
| 85 | 1.8.5.3 | Design Final Fixes | 2d | 2006-06-15 | 2006-06-16 | 84 | 10d | 0d |  | Member | 16h |
| 86 | 1.8.5.4 | Creation of Dev Distro | 1d | 2006-06-19 | 2006-06-19 | 85 | 10d | 0d |  | Component Manager | 8h |
| 87 | 1.8.5.5 | Development Posting | 6d | 2006-06-20 | 2006-06-27 | 86 | 10d | 0d | start no earlier than 2005-03-30 | Member | 48h |
| 88 | 1.8.5.6 | Development Review | 4d | 2006-06-28 | 2006-07-03 | 87 | 10d | 0d |  | Member | 32h |
| 89 | 1.8.5.7 | Development Final Fixes | 2d | 2006-07-04 | 2006-07-05 | 88 | 10d | 0d | finish no earlier than 2005-04-06 | Member | 16h |
| 90 | 1.8.5.8 | Post to Catalog | 1d | 2006-07-06 | 2006-07-06 | 89 | 10d |  |  | Component Manager | 8h |
| 91 | 1.8.6 | **Review Management (2 dev)** | 26d | 2006-06-01 | 2006-07-06 |  | 10d |  |  |  | 320h |
| 92 | 1.8.6.1 | Design Posting | 6d | 2006-06-01 | 2006-06-08 |  | 49d | 0d | start no earlier than 2006-06-01 | Member | 48h |
| 93 | 1.8.6.2 | Design Review | 4d | 2006-06-09 | 2006-06-14 | 92 | 49d | 0d | finish no earlier than 2005-03-21 | Member | 32h |
| 94 | 1.8.6.3 | Design Final Fixes | 2d | 2006-06-15 | 2006-06-16 | 93 | 49d | 0d |  | Member | 16h |
| 95 | 1.8.6.4 | **Review Management Development** | 14d | 2006-06-19 | 2006-07-06 | 94 | 10d |  |  |  | 112h |
| 96 | 1.8.6.4.1 | Creation of Management Dev Distro | 1d | 2006-06-19 | 2006-06-19 | 94 | 49d | 0d |  | Component Manager | 8h |
| 97 | 1.8.6.4.2 | Development Posting | 6d | 2006-06-20 | 2006-06-27 | 96 | 49d | 0d | start no earlier than 2005-03-30 | Member | 48h |
| 98 | 1.8.6.4.3 | Development Review | 4d | 2006-06-28 | 2006-07-03 | 97 | 49d | 0d |  | Member | 32h |
| 99 | 1.8.6.4.4 | Development Final Fixes | 2d | 2006-07-04 | 2006-07-05 | 98 | 49d | 0d | finish no earlier than 2005-04-06 | Member | 16h |
| 100 | 1.8.6.4.5 | Post to Catalog | 1d | 2006-07-06 | 2006-07-06 | 99 | 49d |  |  | Component Manager | 8h |
| 101 | 1.8.6.5 | **Review Persistence Development** | 14d | 2006-06-19 | 2006-07-06 |  | 10d |  |  |  | 112h |
| 102 | 1.8.6.5.1 | Creation of Management Dev Distro | 1d | 2006-06-19 | 2006-06-19 | 94 | 49d | 0d |  | Component Manager | 8h |
| 103 | 1.8.6.5.2 | Development Posting | 6d | 2006-06-20 | 2006-06-27 | 102 | 49d | 0d | start no earlier than 2005-03-30 | Member | 48h |
| 104 | 1.8.6.5.3 | Development Review | 4d | 2006-06-28 | 2006-07-03 | 103 | 49d | 0d |  | Member | 32h |
| 105 | 1.8.6.5.4 | Development Final Fixes | 2d | 2006-07-04 | 2006-07-05 | 104 | 49d | 0d | finish no earlier than 2005-04-06 | Member | 16h |
| 106 | 1.8.6.5.5 | Post to Catalog | 1d | 2006-07-06 | 2006-07-06 | 105 | 49d |  |  | Component Manager | 8h |

| ID | WBS | Task | Duration | Start | Finish | Predecessors | Total slack | Free slack | Constraint | Resources | Work |
| --- | --- | --- | --- | --- | --- | --- | --- | --- | --- | --- | --- |
| 107 | 1.8.7 | **Project Phases 2.0** | 26d | 2006-06-08 | 2006-07-13 |  | 5d |  |  |  | 208h |
| 108 | 1.8.7.1 | Design Posting | 6d | 2006-06-08 | 2006-06-15 |  | 44d | 0d | start no earlier than 2006-06-08 | Member | 48h |
| 109 | 1.8.7.2 | Design Review | 4d | 2006-06-16 | 2006-06-21 | 108 | 44d | 0d | finish no earlier than 2005-03-21 | Member | 32h |
| 110 | 1.8.7.3 | Design Final Fixes | 2d | 2006-06-22 | 2006-06-23 | 109 | 44d | 0d |  | Member | 16h |
| 111 | 1.8.7.4 | Creation of Dev Distro | 1d | 2006-06-26 | 2006-06-26 | 110 | 44d | 0d |  | Component Manager | 8h |
| 112 | 1.8.7.5 | Development Posting | 6d | 2006-06-27 | 2006-07-04 | 111 | 44d | 0d | start no earlier than 2005-03-30 | Member | 48h |
| 113 | 1.8.7.6 | Development Review | 4d | 2006-07-05 | 2006-07-10 | 112 | 44d | 0d |  | Member | 32h |
| 114 | 1.8.7.7 | Development Final Fixes | 2d | 2006-07-11 | 2006-07-12 | 113 | 44d | 0d | finish no earlier than 2005-04-06 | Member | 16h |
| 115 | 1.8.7.8 | Post to Catalog | 1d | 2006-07-13 | 2006-07-13 | 114 | 44d |  |  | Component Manager | 8h |
| 116 | 1.8.8 | **Review Score Calculator** | 26d | 2006-06-08 | 2006-07-13 |  | 5d |  |  |  | 208h |
| 117 | 1.8.8.1 | Design Posting | 6d | 2006-06-08 | 2006-06-15 |  | 44d | 0d | start no earlier than 2006-06-08 | Member | 48h |
| 118 | 1.8.8.2 | Design Review | 4d | 2006-06-16 | 2006-06-21 | 117 | 44d | 0d | finish no earlier than 2005-03-21 | Member | 32h |
| 119 | 1.8.8.3 | Design Final Fixes | 2d | 2006-06-22 | 2006-06-23 | 118 | 44d | 0d |  | Member | 16h |
| 120 | 1.8.8.4 | Creation of Dev Distro | 1d | 2006-06-26 | 2006-06-26 | 119 | 44d | 0d |  | Component Manager | 8h |
| 121 | 1.8.8.5 | Development Posting | 6d | 2006-06-27 | 2006-07-04 | 120 | 44d | 0d | start no earlier than 2005-03-30 | Member | 48h |
| 122 | 1.8.8.6 | Development Review | 4d | 2006-07-05 | 2006-07-10 | 121 | 44d | 0d |  | Member | 32h |
| 123 | 1.8.8.7 | Development Final Fixes | 2d | 2006-07-11 | 2006-07-12 | 122 | 44d | 0d | finish no earlier than 2005-04-06 | Member | 16h |
| 124 | 1.8.8.8 | Post to Catalog | 1d | 2006-07-13 | 2006-07-13 | 123 | 44d |  |  | Component Manager | 8h |
| 125 | 1.8.9 | **Review Score Aggregator** | 26d | 2006-06-08 | 2006-07-13 |  | 5d |  |  |  | 208h |
| 126 | 1.8.9.1 | Design Posting | 6d | 2006-06-08 | 2006-06-15 |  | 44d | 0d | start no earlier than 2006-06-08 | Member | 48h |
| 127 | 1.8.9.2 | Design Review | 4d | 2006-06-16 | 2006-06-21 | 126 | 44d | 0d | finish no earlier than 2005-03-21 | Member | 32h |
| 128 | 1.8.9.3 | Design Final Fixes | 2d | 2006-06-22 | 2006-06-23 | 127 | 44d | 0d |  | Member | 16h |
| 129 | 1.8.9.4 | Creation of Dev Distro | 1d | 2006-06-26 | 2006-06-26 | 128 | 44d | 0d |  | Component Manager | 8h |
| 130 | 1.8.9.5 | Development Posting | 6d | 2006-06-27 | 2006-07-04 | 129 | 44d | 0d | start no earlier than 2005-03-30 | Member | 48h |
| 131 | 1.8.9.6 | Development Review | 4d | 2006-07-05 | 2006-07-10 | 130 | 44d | 0d |  | Member | 32h |
| 132 | 1.8.9.7 | Development Final Fixes | 2d | 2006-07-11 | 2006-07-12 | 131 | 44d | 0d | finish no earlier than 2005-04-06 | Member | 16h |
| 133 | 1.8.9.8 | Post to Catalog | 1d | 2006-07-13 | 2006-07-13 | 132 | 44d |  |  | Component Manager | 8h |

| ID | WBS | Task | Duration | Start | Finish | Predecessors | Total slack | Free slack | Constraint | Resources | Work |
| --- | --- | --- | --- | --- | --- | --- | --- | --- | --- | --- | --- |
| 134 | 1.8.10 | **Project Management (2 dev)** | 26d | 2006-06-08 | 2006-07-13 |  | 5d |  |  |  | 320h |
| 135 | 1.8.10.1 | Design Posting | 6d | 2006-06-08 | 2006-06-15 |  | 44d | 0d | start no earlier than 2006-06-08 | Member | 48h |
| 136 | 1.8.10.2 | Design Review | 4d | 2006-06-16 | 2006-06-21 | 135 | 44d | 0d | finish no earlier than 2005-03-21 | Member | 32h |
| 137 | 1.8.10.3 | Design Final Fixes | 2d | 2006-06-22 | 2006-06-23 | 136 | 44d | 0d |  | Member | 16h |
| 138 | 1.8.10.4 | **Project Management Development** | 14d | 2006-06-26 | 2006-07-13 | 137 | 5d |  |  |  | 112h |
| 139 | 1.8.10.4.1 | Creation of Management Dev Distro | 1d | 2006-06-26 | 2006-06-26 | 137 | 44d | 0d |  | Component Manager | 8h |
| 140 | 1.8.10.4.2 | Development Posting | 6d | 2006-06-27 | 2006-07-04 | 139 | 44d | 0d | start no earlier than 2005-03-30 | Member | 48h |
| 141 | 1.8.10.4.3 | Development Review | 4d | 2006-07-05 | 2006-07-10 | 140 | 44d | 0d |  | Member | 32h |
| 142 | 1.8.10.4.4 | Development Final Fixes | 2d | 2006-07-11 | 2006-07-12 | 141 | 44d | 0d | finish no earlier than 2005-04-06 | Member | 16h |
| 143 | 1.8.10.4.5 | Post to Catalog | 1d | 2006-07-13 | 2006-07-13 | 142 | 44d |  |  | Component Manager | 8h |
| 144 | 1.8.10.5 | **Project Persistence Development** | 14d | 2006-06-26 | 2006-07-13 |  | 5d |  |  |  | 112h |
| 145 | 1.8.10.5.1 | Creation of Management Dev Distro | 1d | 2006-06-26 | 2006-06-26 | 137 | 44d | 0d |  | Component Manager | 8h |
| 146 | 1.8.10.5.2 | Development Posting | 6d | 2006-06-27 | 2006-07-04 | 145 | 44d | 0d | start no earlier than 2005-03-30 | Member | 48h |
| 147 | 1.8.10.5.3 | Development Review | 4d | 2006-07-05 | 2006-07-10 | 146 | 44d | 0d |  | Member | 32h |
| 148 | 1.8.10.5.4 | Development Final Fixes | 2d | 2006-07-11 | 2006-07-12 | 147 | 44d | 0d | finish no earlier than 2005-04-06 | Member | 16h |
| 149 | 1.8.10.5.5 | Post to Catalog | 1d | 2006-07-13 | 2006-07-13 | 148 | 44d |  |  | Component Manager | 8h |
| 150 | 1.8.11 | **Resource Management** | 26d | 2006-06-08 | 2006-07-13 |  | 5d |  |  |  | 320h |
| 151 | 1.8.11.1 | Design Posting | 6d | 2006-06-08 | 2006-06-15 |  | 44d | 0d | start no earlier than 2006-06-08 | Member | 48h |
| 152 | 1.8.11.2 | Design Review | 4d | 2006-06-16 | 2006-06-21 | 151 | 44d | 0d | finish no earlier than 2005-03-21 | Member | 32h |
| 153 | 1.8.11.3 | Design Final Fixes | 2d | 2006-06-22 | 2006-06-23 | 152 | 44d | 0d |  | Member | 16h |
| 154 | 1.8.11.4 | **Resource Management Development** | 14d | 2006-06-26 | 2006-07-13 | 153 | 5d |  |  |  | 112h |
| 155 | 1.8.11.4.1 | Creation of Management Dev Distro | 1d | 2006-06-26 | 2006-06-26 | 153 | 44d | 0d |  | Component Manager | 8h |
| 156 | 1.8.11.4.2 | Development Posting | 6d | 2006-06-27 | 2006-07-04 | 155 | 44d | 0d | start no earlier than 2005-03-30 | Member | 48h |
| 157 | 1.8.11.4.3 | Development Review | 4d | 2006-07-05 | 2006-07-10 | 156 | 44d | 0d |  | Member | 32h |
| 158 | 1.8.11.4.4 | Development Final Fixes | 2d | 2006-07-11 | 2006-07-12 | 157 | 44d | 0d | finish no earlier than 2005-04-06 | Member | 16h |
| 159 | 1.8.11.4.5 | Post to Catalog | 1d | 2006-07-13 | 2006-07-13 | 158 | 44d |  |  | Component Manager | 8h |

Notes:
- 150: jmj

| ID | WBS | Task | Duration | Start | Finish | Predecessors | Total slack | Free slack | Constraint | Resources | Work |
| --- | --- | --- | --- | --- | --- | --- | --- | --- | --- | --- | --- |
| 160 | 1.8.11.5 | **Resource Persistence Development** | 14d | 2006-06-26 | 2006-07-13 |  | 5d |  |  |  | 112h |
| 161 | 1.8.11.5.1 | Creation of Management Dev Distro | 1d | 2006-06-26 | 2006-06-26 | 153 | 44d | 0d |  | Component Manager | 8h |
| 162 | 1.8.11.5.2 | Development Posting | 6d | 2006-06-27 | 2006-07-04 | 161 | 44d | 0d | start no earlier than 2005-03-30 | Member | 48h |
| 163 | 1.8.11.5.3 | Development Review | 4d | 2006-07-05 | 2006-07-10 | 162 | 44d | 0d |  | Member | 32h |
| 164 | 1.8.11.5.4 | Development Final Fixes | 2d | 2006-07-11 | 2006-07-12 | 163 | 44d | 0d | finish no earlier than 2005-04-06 | Member | 16h |
| 165 | 1.8.11.5.5 | Post to Catalog | 1d | 2006-07-13 | 2006-07-13 | 164 | 44d |  |  | Component Manager | 8h |
| 166 | 1.8.12 | **Deliverable Management** | 26d | 2006-06-08 | 2006-07-13 |  | 5d |  |  |  | 320h |
| 167 | 1.8.12.1 | Design Posting | 6d | 2006-06-08 | 2006-06-15 |  | 44d | 0d | start no earlier than 2006-06-08 | Member | 48h |
| 168 | 1.8.12.2 | Design Review | 4d | 2006-06-16 | 2006-06-21 | 167 | 44d | 0d | finish no earlier than 2005-03-21 | Member | 32h |
| 169 | 1.8.12.3 | Design Final Fixes | 2d | 2006-06-22 | 2006-06-23 | 168 | 44d | 0d |  | Member | 16h |
| 170 | 1.8.12.4 | **Deliverable Management Development** | 14d | 2006-06-26 | 2006-07-13 |  | 5d |  |  |  | 112h |
| 171 | 1.8.12.4.1 | Creation of Management Dev Distro | 1d | 2006-06-26 | 2006-06-26 | 169 | 44d | 0d |  | Component Manager | 8h |
| 172 | 1.8.12.4.2 | Development Posting | 6d | 2006-06-27 | 2006-07-04 | 171 | 44d | 0d | start no earlier than 2005-03-30 | Member | 48h |
| 173 | 1.8.12.4.3 | Development Review | 4d | 2006-07-05 | 2006-07-10 | 172 | 44d | 0d |  | Member | 32h |
| 174 | 1.8.12.4.4 | Development Final Fixes | 2d | 2006-07-11 | 2006-07-12 | 173 | 44d | 0d | finish no earlier than 2005-04-06 | Member | 16h |
| 175 | 1.8.12.4.5 | Post to Catalog | 1d | 2006-07-13 | 2006-07-13 | 174 | 44d |  |  | Component Manager | 8h |
| 176 | 1.8.12.5 | **Deliverable Persistence Development** | 14d | 2006-06-26 | 2006-07-13 |  | 5d |  |  |  | 112h |
| 177 | 1.8.12.5.1 | Creation of Management Dev Distro | 1d | 2006-06-26 | 2006-06-26 | 169 | 44d | 0d |  | Component Manager | 8h |
| 178 | 1.8.12.5.2 | Development Posting | 6d | 2006-06-27 | 2006-07-04 | 177 | 44d | 0d | start no earlier than 2005-03-30 | Member | 48h |
| 179 | 1.8.12.5.3 | Development Review | 4d | 2006-07-05 | 2006-07-10 | 178 | 44d | 0d |  | Member | 32h |
| 180 | 1.8.12.5.4 | Development Final Fixes | 2d | 2006-07-11 | 2006-07-12 | 179 | 44d | 0d | finish no earlier than 2005-04-06 | Member | 16h |
| 181 | 1.8.12.5.5 | Post to Catalog | 1d | 2006-07-13 | 2006-07-13 | 180 | 44d |  |  | Component Manager | 8h |
| 182 | 1.8.13 | **Search Builder 1.3** | 26d | 2006-06-08 | 2006-07-13 |  | 5d |  |  |  | 208h |
| 183 | 1.8.13.1 | Design Posting | 6d | 2006-06-08 | 2006-06-15 |  | 44d | 0d | start no earlier than 2006-06-08 | Member | 48h |
| 184 | 1.8.13.2 | Design Review | 4d | 2006-06-16 | 2006-06-21 | 183 | 44d | 0d | finish no earlier than 2005-03-21 | Member | 32h |
| 185 | 1.8.13.3 | Design Final Fixes | 2d | 2006-06-22 | 2006-06-23 | 184 | 44d | 0d |  | Member | 16h |
| 186 | 1.8.13.4 | Creation of Dev Distro | 1d | 2006-06-26 | 2006-06-26 | 185 | 44d | 0d |  | Component Manager | 8h |
| 187 | 1.8.13.5 | Development Posting | 6d | 2006-06-27 | 2006-07-04 | 186 | 44d | 0d | start no earlier than 2005-03-30 | Member | 48h |
| 188 | 1.8.13.6 | Development Review | 4d | 2006-07-05 | 2006-07-10 | 187 | 44d | 0d |  | Member | 32h |
| 189 | 1.8.13.7 | Development Final Fixes | 2d | 2006-07-11 | 2006-07-12 | 188 | 44d | 0d | finish no earlier than 2005-04-06 | Member | 16h |
| 190 | 1.8.13.8 | Post to Catalog | 1d | 2006-07-13 | 2006-07-13 | 189 | 44d |  |  | Component Manager | 8h |

Notes:
- 166: jmj
- 182: -l

| ID | WBS | Task | Duration | Start | Finish | Predecessors | Total slack | Free slack | Constraint | Resources | Work |
| --- | --- | --- | --- | --- | --- | --- | --- | --- | --- | --- | --- |
| 191 | 1.8.14 | **Phase Management** | 26d | 2006-06-08 | 2006-07-13 |  | 5d |  |  |  | 320h |
| 192 | 1.8.14.1 | Design Posting | 6d | 2006-06-08 | 2006-06-15 |  | 44d | 0d | start no earlier than 2006-06-08 | Member | 48h |
| 193 | 1.8.14.2 | Design Review | 4d | 2006-06-16 | 2006-06-21 | 192 | 44d | 0d | finish no earlier than 2005-03-21 | Member | 32h |
| 194 | 1.8.14.3 | Design Final Fixes | 2d | 2006-06-22 | 2006-06-23 | 193 | 44d | 0d |  | Member | 16h |
| 195 | 1.8.14.4 | **Phase Management Development** | 14d | 2006-06-26 | 2006-07-13 | 194 | 5d |  |  |  | 112h |
| 196 | 1.8.14.4.1 | Creation of Management Dev Distro | 1d | 2006-06-26 | 2006-06-26 | 194 | 44d | 0d |  | Component Manager | 8h |
| 197 | 1.8.14.4.2 | Development Posting | 6d | 2006-06-27 | 2006-07-04 | 196 | 44d | 0d | start no earlier than 2005-03-30 | Member | 48h |
| 198 | 1.8.14.4.3 | Development Review | 4d | 2006-07-05 | 2006-07-10 | 197 | 44d | 0d |  | Member | 32h |
| 199 | 1.8.14.4.4 | Development Final Fixes | 2d | 2006-07-11 | 2006-07-12 | 198 | 44d | 0d | finish no earlier than 2005-04-06 | Member | 16h |
| 200 | 1.8.14.4.5 | Post to Catalog | 1d | 2006-07-13 | 2006-07-13 | 199 | 44d |  |  | Component Manager | 8h |
| 201 | 1.8.14.5 | **Phase Persistence Development** | 14d | 2006-06-26 | 2006-07-13 |  | 5d |  |  |  | 112h |
| 202 | 1.8.14.5.1 | Creation of Management Dev Distro | 1d | 2006-06-26 | 2006-06-26 | 194 | 44d | 0d |  | Component Manager | 8h |
| 203 | 1.8.14.5.2 | Development Posting | 6d | 2006-06-27 | 2006-07-04 | 202 | 44d | 0d | start no earlier than 2005-03-30 | Member | 48h |
| 204 | 1.8.14.5.3 | Development Review | 4d | 2006-07-05 | 2006-07-10 | 203 | 44d | 0d |  | Member | 32h |
| 205 | 1.8.14.5.4 | Development Final Fixes | 2d | 2006-07-11 | 2006-07-12 | 204 | 44d | 0d | finish no earlier than 2005-04-06 | Member | 16h |
| 206 | 1.8.14.5.5 | Post to Catalog | 1d | 2006-07-13 | 2006-07-13 | 205 | 44d |  |  | Component Manager | 8h |
| 207 | 1.8.15 | **Project Phase Template** | 26d | 2006-06-08 | 2006-07-13 |  | 5d |  |  |  | 208h |
| 208 | 1.8.15.1 | Design Posting | 6d | 2006-06-08 | 2006-06-15 |  | 44d | 0d | start no earlier than 2006-06-08 | Member | 48h |
| 209 | 1.8.15.2 | Design Review | 4d | 2006-06-16 | 2006-06-21 | 208 | 44d | 0d | finish no earlier than 2005-03-21 | Member | 32h |
| 210 | 1.8.15.3 | Design Final Fixes | 2d | 2006-06-22 | 2006-06-23 | 209 | 44d | 0d |  | Member | 16h |
| 211 | 1.8.15.4 | Creation of Dev Distro | 1d | 2006-06-26 | 2006-06-26 | 210 | 44d | 0d |  | Component Manager | 8h |
| 212 | 1.8.15.5 | Development Posting | 6d | 2006-06-27 | 2006-07-04 | 211 | 44d | 0d | start no earlier than 2005-03-30 | Member | 48h |
| 213 | 1.8.15.6 | Development Review | 4d | 2006-07-05 | 2006-07-10 | 212 | 44d | 0d |  | Member | 32h |
| 214 | 1.8.15.7 | Development Final Fixes | 2d | 2006-07-11 | 2006-07-12 | 213 | 44d | 0d | finish no earlier than 2005-04-06 | Member | 16h |
| 215 | 1.8.15.8 | Post to Catalog | 1d | 2006-07-13 | 2006-07-13 | 214 | 44d |  |  | Component Manager | 8h |

Notes:
- 191: ju
- 207: jmj

| ID | WBS | Task | Duration | Start | Finish | Predecessors | Total slack | Free slack | Constraint | Resources | Work |
| --- | --- | --- | --- | --- | --- | --- | --- | --- | --- | --- | --- |
| 216 | 1.8.16 | **Online Review Login (custom)** | 26d | 2006-06-08 | 2006-07-13 |  | 5d |  |  |  | 208h |
| 217 | 1.8.16.1 | Design Posting | 6d | 2006-06-08 | 2006-06-15 |  | 44d | 0d | start no earlier than 2006-06-08 | Member | 48h |
| 218 | 1.8.16.2 | Design Review | 4d | 2006-06-16 | 2006-06-21 | 217 | 44d | 0d | finish no earlier than 2005-03-21 | Member | 32h |
| 219 | 1.8.16.3 | Design Final Fixes | 2d | 2006-06-22 | 2006-06-23 | 218 | 44d | 0d |  | Member | 16h |
| 220 | 1.8.16.4 | Creation of Dev Distro | 1d | 2006-06-26 | 2006-06-26 | 219 | 44d | 0d |  | Component Manager | 8h |
| 221 | 1.8.16.5 | Development Posting | 6d | 2006-06-27 | 2006-07-04 | 220 | 44d | 0d | start no earlier than 2005-03-30 | Member | 48h |
| 222 | 1.8.16.6 | Development Review | 4d | 2006-07-05 | 2006-07-10 | 221 | 44d | 0d |  | Member | 32h |
| 223 | 1.8.16.7 | Development Final Fixes | 2d | 2006-07-11 | 2006-07-12 | 222 | 44d | 0d | finish no earlier than 2005-04-06 | Member | 16h |
| 224 | 1.8.16.8 | Post to Catalog | 1d | 2006-07-13 | 2006-07-13 | 223 | 44d |  |  | Component Manager | 8h |
| 225 | 1.8.17 | **User Project Data Store (custom)** | 26d | 2006-06-15 | 2006-07-20 |  | 0d |  |  |  | 208h |
| 226 | 1.8.17.1 | Design Posting | 6d | 2006-06-15 | 2006-06-22 |  | 0d |  | start no earlier than 2006-06-15 | Member | 48h |
| 227 | 1.8.17.2 | Design Review | 4d | 2006-06-23 | 2006-06-28 | 226 | 0d |  | finish no earlier than 2005-03-21 | Member | 32h |
| 228 | 1.8.17.3 | Design Final Fixes | 2d | 2006-06-29 | 2006-06-30 | 227 | 0d |  |  | Member | 16h |
| 229 | 1.8.17.4 | Creation of Dev Distro | 1d | 2006-07-03 | 2006-07-03 | 228 | 0d |  |  | Component Manager | 8h |
| 230 | 1.8.17.5 | Development Posting | 6d | 2006-07-04 | 2006-07-11 | 229 | 0d |  | start no earlier than 2005-03-30 | Member | 48h |
| 231 | 1.8.17.6 | Development Review | 4d | 2006-07-12 | 2006-07-17 | 230 | 0d |  |  | Member | 32h |
| 232 | 1.8.17.7 | Development Final Fixes | 2d | 2006-07-18 | 2006-07-19 | 231 | 0d |  | finish no earlier than 2005-04-06 | Member | 16h |
| 233 | 1.8.17.8 | Post to Catalog | 1d | 2006-07-20 | 2006-07-20 | 232 | 0d |  |  | Component Manager | 8h |
| 234 | 1.8.18 | **Online Review Ajax Support (custom)** | 26d | 2006-06-15 | 2006-07-20 |  | 0d |  |  |  | 208h |
| 235 | 1.8.18.1 | Design Posting | 6d | 2006-06-15 | 2006-06-22 |  | 0d |  | start no earlier than 2006-06-15 | Member | 48h |
| 236 | 1.8.18.2 | Design Review | 4d | 2006-06-23 | 2006-06-28 | 235 | 0d |  | finish no earlier than 2005-03-21 | Member | 32h |
| 237 | 1.8.18.3 | Design Final Fixes | 2d | 2006-06-29 | 2006-06-30 | 236 | 0d |  |  | Member | 16h |
| 238 | 1.8.18.4 | Creation of Dev Distro | 1d | 2006-07-03 | 2006-07-03 | 237 | 0d |  |  | Component Manager | 8h |
| 239 | 1.8.18.5 | Development Posting | 6d | 2006-07-04 | 2006-07-11 | 238 | 0d |  | start no earlier than 2005-03-30 | Member | 48h |
| 240 | 1.8.18.6 | Development Review | 4d | 2006-07-12 | 2006-07-17 | 239 | 0d |  |  | Member | 32h |
| 241 | 1.8.18.7 | Development Final Fixes | 2d | 2006-07-18 | 2006-07-19 | 240 | 0d |  | finish no earlier than 2005-04-06 | Member | 16h |
| 242 | 1.8.18.8 | Post to Catalog | 1d | 2006-07-20 | 2006-07-20 | 241 | 0d |  |  | Component Manager | 8h |

Notes:
- 216: jmjm
- 234: jmj

| ID | WBS | Task | Duration | Start | Finish | Predecessors | Total slack | Constraint | Resources | Work |
| --- | --- | --- | --- | --- | --- | --- | --- | --- | --- | --- |
| 243 | 1.8.19 | **Online Review Deliverables (custom)** | 26d | 2006-06-15 | 2006-07-20 |  | 0d |  |  | 208h |
| 244 | 1.8.19.1 | Design Posting | 6d | 2006-06-15 | 2006-06-22 |  | 0d | start no earlier than 2006-06-15 | Member | 48h |
| 245 | 1.8.19.2 | Design Review | 4d | 2006-06-23 | 2006-06-28 | 244 | 0d | finish no earlier than 2005-03-21 | Member | 32h |
| 246 | 1.8.19.3 | Design Final Fixes | 2d | 2006-06-29 | 2006-06-30 | 245 | 0d |  | Member | 16h |
| 247 | 1.8.19.4 | Creation of Dev Distro | 1d | 2006-07-03 | 2006-07-03 | 246 | 0d |  | Component Manager | 8h |
| 248 | 1.8.19.5 | Development Posting | 6d | 2006-07-04 | 2006-07-11 | 247 | 0d | start no earlier than 2005-03-30 | Member | 48h |
| 249 | 1.8.19.6 | Development Review | 4d | 2006-07-12 | 2006-07-17 | 248 | 0d |  | Member | 32h |
| 250 | 1.8.19.7 | Development Final Fixes | 2d | 2006-07-18 | 2006-07-19 | 249 | 0d | finish no earlier than 2005-04-06 | Member | 16h |
| 251 | 1.8.19.8 | Post to Catalog | 1d | 2006-07-20 | 2006-07-20 | 250 | 0d |  | Component Manager | 8h |
| 252 | 1.8.20 | **Online Review Phases (custom)** | 26d | 2006-06-15 | 2006-07-20 |  | 0d |  |  | 208h |
| 253 | 1.8.20.1 | Design Posting | 6d | 2006-06-15 | 2006-06-22 |  | 0d | start no earlier than 2006-06-15 | Member | 48h |
| 254 | 1.8.20.2 | Design Review | 4d | 2006-06-23 | 2006-06-28 | 253 | 0d | finish no earlier than 2005-03-21 | Member | 32h |
| 255 | 1.8.20.3 | Design Final Fixes | 2d | 2006-06-29 | 2006-06-30 | 254 | 0d |  | Member | 16h |
| 256 | 1.8.20.4 | Creation of Dev Distro | 1d | 2006-07-03 | 2006-07-03 | 255 | 0d |  | Component Manager | 8h |
| 257 | 1.8.20.5 | Development Posting | 6d | 2006-07-04 | 2006-07-11 | 256 | 0d | start no earlier than 2005-03-30 | Member | 48h |
| 258 | 1.8.20.6 | Development Review | 4d | 2006-07-12 | 2006-07-17 | 257 | 0d |  | Member | 32h |
| 259 | 1.8.20.7 | Development Final Fixes | 2d | 2006-07-18 | 2006-07-19 | 258 | 0d | finish no earlier than 2005-04-06 | Member | 16h |
| 260 | 1.8.20.8 | Post to Catalog | 1d | 2006-07-20 | 2006-07-20 | 259 | 0d |  | Component Manager | 8h |
| 261 | 1.8.21 | **Auto Pilot** | 26d | 2006-06-15 | 2006-07-20 |  | 0d |  |  | 208h |
| 262 | 1.8.21.1 | Design Posting | 6d | 2006-06-15 | 2006-06-22 |  | 0d | start no earlier than 2006-06-15 | Member | 48h |
| 263 | 1.8.21.2 | Design Review | 4d | 2006-06-23 | 2006-06-28 | 262 | 0d | finish no earlier than 2005-03-21 | Member | 32h |
| 264 | 1.8.21.3 | Design Final Fixes | 2d | 2006-06-29 | 2006-06-30 | 263 | 0d |  | Member | 16h |
| 265 | 1.8.21.4 | Creation of Dev Distro | 1d | 2006-07-03 | 2006-07-03 | 264 | 0d |  | Component Manager | 8h |
| 266 | 1.8.21.5 | Development Posting | 6d | 2006-07-04 | 2006-07-11 | 265 | 0d | start no earlier than 2005-03-30 | Member | 48h |
| 267 | 1.8.21.6 | Development Review | 4d | 2006-07-12 | 2006-07-17 | 266 | 0d |  | Member | 32h |
| 268 | 1.8.21.7 | Development Final Fixes | 2d | 2006-07-18 | 2006-07-19 | 267 | 0d | finish no earlier than 2005-04-06 | Member | 16h |
| 269 | 1.8.21.8 | Post to Catalog | 1d | 2006-07-20 | 2006-07-20 | 268 | 0d |  | Component Manager | 8h |

| ID | WBS | Task | Duration | Start | Finish | Predecessors | Total slack | Free slack | Constraint | Resources | Work |
| --- | --- | --- | --- | --- | --- | --- | --- | --- | --- | --- | --- |
| 270 | 1.8.22 | **Auto Screening Tool (2 dev)** | 26d | 2006-06-15 | 2006-07-20 |  | 0d |  |  |  | 208h |
| 271 | 1.8.22.1 | Design Posting | 6d | 2006-06-15 | 2006-06-22 |  | 0d |  | start no earlier than 2006-06-15 | Member | 48h |
| 272 | 1.8.22.2 | Design Review | 4d | 2006-06-23 | 2006-06-28 | 271 | 0d |  | finish no earlier than 2005-03-21 | Member | 32h |
| 273 | 1.8.22.3 | Design Final Fixes | 2d | 2006-06-29 | 2006-06-30 | 272 | 0d |  |  | Member | 16h |
| 274 | 1.8.22.4 | Creation of Dev Distro | 1d | 2006-07-03 | 2006-07-03 | 273 | 0d |  |  | Component Manager | 8h |
| 275 | 1.8.22.5 | Development Posting | 6d | 2006-07-04 | 2006-07-11 | 274 | 0d |  | start no earlier than 2005-03-30 | Member | 48h |
| 276 | 1.8.22.6 | Development Review | 4d | 2006-07-12 | 2006-07-17 | 275 | 0d |  |  | Member | 32h |
| 277 | 1.8.22.7 | Development Final Fixes | 2d | 2006-07-18 | 2006-07-19 | 276 | 0d |  | finish no earlier than 2005-04-06 | Member | 16h |
| 278 | 1.8.22.8 | Post to Catalog | 1d | 2006-07-20 | 2006-07-20 | 277 | 0d |  |  | Component Manager | 8h |
| 279 | 1.8.23 | **Auto Screening Management (Custom)** | 26d | 2006-06-15 | 2006-07-20 |  | 0d |  |  |  | 208h |
| 280 | 1.8.23.1 | Design Posting | 6d | 2006-06-15 | 2006-06-22 |  | 0d |  | start no earlier than 2006-06-15 | Member | 48h |
| 281 | 1.8.23.2 | Design Review | 4d | 2006-06-23 | 2006-06-28 | 280 | 0d |  | finish no earlier than 2005-03-21 | Member | 32h |
| 282 | 1.8.23.3 | Design Final Fixes | 2d | 2006-06-29 | 2006-06-30 | 281 | 0d |  |  | Member | 16h |
| 283 | 1.8.23.4 | Creation of Dev Distro | 1d | 2006-07-03 | 2006-07-03 | 282 | 0d |  |  | Component Manager | 8h |
| 284 | 1.8.23.5 | Development Posting | 6d | 2006-07-04 | 2006-07-11 | 283 | 0d |  | start no earlier than 2005-03-30 | Member | 48h |
| 285 | 1.8.23.6 | Development Review | 4d | 2006-07-12 | 2006-07-17 | 284 | 0d |  |  | Member | 32h |
| 286 | 1.8.23.7 | Development Final Fixes | 2d | 2006-07-18 | 2006-07-19 | 285 | 0d |  | finish no earlier than 2005-04-06 | Member | 16h |
| 287 | 1.8.23.8 | Post to Catalog | 1d | 2006-07-20 | 2006-07-20 | 286 | 0d |  |  | Component Manager | 8h |
| 288 | 1.9 | **Assembly Competitions** | 39d | 2006-06-26 | 2006-08-17 |  | 0d |  |  |  | 864h |
| 289 | 1.9.1 | **Scorecard Admin Assembly** | 29d | 2006-06-26 | 2006-08-03 |  | 10d |  |  |  | 216h |
| 290 | 1.9.1.1 | **Setup** | 10d | 2006-06-26 | 2006-07-07 |  | 19d |  |  |  |  |
| 291 | 1.9.1.1.1 | Divide Spec and Arch Deliverables | 3d | 2006-06-26 | 2006-06-28 | 82FS-15d, 66FS-15d | 36d |  | finish no earlier than 2006-06-28 |  |  |
| 292 | 1.9.1.1.2 | TopCoder Website Content Creation/Updates | 3d | 2006-06-28 | 2006-06-30 | 82FS-10d, 66FS-10d | 34d |  | finish no earlier than 2006-06-30 |  |  |
| 293 | 1.9.1.1.3 | TopCoder Website Informaiton Posted | 1d | 2006-06-30 | 2006-06-30 | 82FS-5d, 66FS-5d | 27d | 0d | start no earlier than 2006-05-17 |  |  |
| 294 | 1.9.1.1.4 | Package Components | 1d | 2006-07-07 | 2006-07-07 | 82, 66 | 10d | 0d |  |  |  |

Notes:
- 279: jmj

| ID | WBS | Task | Duration | Start | Finish | Predecessors | Total slack | Free slack | Constraint | Resources | Work | Text1 |
| --- | --- | --- | --- | --- | --- | --- | --- | --- | --- | --- | --- | --- |
| 295 | 1.9.1.2 | **Test Case Development** | 7d | 2006-07-03 | 2006-07-11 |  | 27d |  |  |  | 48h |  |
| 296 | 1.9.1.2.1 | Submit tests | 6d | 2006-07-03 | 2006-07-10 | 293 | 27d | 0d | start no earlier than 2006-03-22 | test case participants | 48h |  |
| 297 | 1.9.1.2.2 | Screen test cases | 1d | 2006-07-11 | 2006-07-11 | 296 | 27d |  |  |  |  |  |
| 298 | 1.9.1.3 | Team Formation | 6d | 2006-07-03 | 2006-07-10 | 293 | 28d |  | start no earlier than 2006-07-03 |  |  |  |
| 299 | 1.9.1.4 | **Development** | 19d | 2006-07-10 | 2006-08-03 |  | 10d |  |  |  | 168h |  |
| 300 | 1.9.1.4.1 | **Opening Round** | 19d | 2006-07-10 | 2006-08-03 |  | 10d |  |  |  | 168h |  |
| 301 | 1.9.1.4.1.1 | **Team Development** | 7d | 2006-07-10 | 2006-07-18 |  | 10d |  |  |  | 56h |  |
| 302 | 1.9.1.4.1.1.1 | **Development of Use Cases** | 7d | 2006-07-10 | 2006-07-18 |  | 10d |  |  | All Teams | 56h | prototype conversion, sequence diagram implementation |
| 303 | 1.9.1.4.1.1.1.1 | Create Unit Tests | 4d | 2006-07-10 | 2006-07-13 | 294 | 10d | 0d | start no earlier than 2006-03-28 |  |  |  |
| 304 | 1.9.1.4.1.1.1.2 | Convert Prototype | 4d | 2006-07-10 | 2006-07-13 | 294 | 10d | 0d | start no earlier than 2006-03-29 |  |  |  |
| 305 | 1.9.1.4.1.1.1.3 | Configure components | 3d | 2006-07-10 | 2006-07-12 | 294 | 11d | 1d | start no earlier than 2006-03-29 |  |  |  |
| 306 | 1.9.1.4.1.1.1.4 | Test | 3d | 2006-07-14 | 2006-07-18 | 303, 304, 305 | 10d | 0d |  |  |  |  |
| 307 | 1.9.1.4.1.2 | **Test case challenge** | 2d | 2006-07-19 | 2006-07-20 | 306 | 10d | 0d |  | All Captains | 56h |  |
| 308 | 1.9.1.4.1.2.1 | Submit Challenges | 1d | 2006-07-19 | 2006-07-19 |  | 10d | 0d |  |  |  |  |
| 309 | 1.9.1.4.1.2.2 | Appeals response | 1d | 2006-07-20 | 2006-07-20 | 308 | 10d |  |  | Reviewer3; Reviewer2; Reviewer1; Assembly Manager; Architect | 40h |  |
| 310 | 1.9.1.4.1.3 | **Review** | 10d | 2006-07-21 | 2006-08-03 |  | 10d |  |  |  | 56h |  |
| 311 | 1.9.1.4.1.3.1 | Score Testcases | 1d | 2006-07-21 | 2006-07-21 | 307 | 11d | 1d |  | DE | 8h |  |
| 312 | 1.9.1.4.1.3.2 | Score Submissions | 2d | 2006-07-21 | 2006-07-24 | 307 | 10d | 0d |  | DE | 16h |  |
| 313 | 1.9.1.4.1.3.3 | Review Code | 2d | 2006-07-25 | 2006-07-26 | 311, 312 | 10d | 0d |  | Review Team | 16h |  |
| 314 | 1.9.1.4.1.3.4 | Appeals | 1d | 2006-07-27 | 2006-07-27 | 313 | 10d | 0d |  | Review Team | 8h |  |
| 315 | 1.9.1.4.1.3.5 | Appeals Response | 1d | 2006-07-28 | 2006-07-28 | 314 | 10d | 0d |  | Review Team | 8h |  |
| 316 | 1.9.1.4.1.3.6 | Final Fixes | 3d | 2006-07-31 | 2006-08-02 | 315 | 10d | 0d |  |  |  |  |
| 317 | 1.9.1.4.1.3.7 | Final Review | 1d | 2006-08-03 | 2006-08-03 | 316 | 10d |  |  |  |  |  |
| 318 | 1.9.2 | **Project Review Assembly** | 35d | 2006-06-30 | 2006-08-17 |  | 0d |  |  |  | 216h |  |
| 319 | 1.9.2.1 | **Setup** | 16d | 2006-06-30 | 2006-07-21 |  | 15d |  |  |  |  |  |
| 320 | 1.9.2.1.1 | Divide Spec and Arch Deliverables | 1d | 2006-06-30 | 2006-06-30 | 38FS-15d | 34d |  | start no earlier than 2006-03-29 |  |  |  |
| 321 | 1.9.2.1.2 | TopCoder Website Content Creation | 5d | 2006-07-07 | 2006-07-13 | 38FS-10d | 25d |  |  |  |  |  |
| 322 | 1.9.2.1.3 | TopCoder Website Informaiton Posted | 1d | 2006-07-14 | 2006-07-14 | 38FS-5d | 14d | 0d | start no earlier than 2006-05-17 |  |  |  |
| 323 | 1.9.2.1.4 | Package Components | 1d | 2006-07-21 | 2006-07-21 | 38 | 0d |  |  |  |  |  |

| ID | WBS | Task | Duration | Start | Finish | Predecessors | Total slack | Free slack | Constraint | Resources | Work | Text1 |
| --- | --- | --- | --- | --- | --- | --- | --- | --- | --- | --- | --- | --- |
| 324 | 1.9.2.2 | **Test Case Development** | 7d | 2006-07-17 | 2006-07-25 |  | 17d |  |  |  | 48h |  |
| 325 | 1.9.2.2.1 | Submit tests | 6d | 2006-07-17 | 2006-07-24 | 322 | 17d | 0d | start no earlier than 2006-03-22 | test case participants | 48h |  |
| 326 | 1.9.2.2.2 | Screen test cases | 1d | 2006-07-25 | 2006-07-25 | 325 | 17d |  |  |  |  |  |
| 327 | 1.9.2.3 | Team Formation | 10d | 2006-07-17 | 2006-07-28 | 322 | 14d |  |  |  |  |  |
| 328 | 1.9.2.4 | **Development** | 19d | 2006-07-24 | 2006-08-17 |  | 0d |  |  |  | 168h |  |
| 329 | 1.9.2.4.1 | **Opening Round** | 19d | 2006-07-24 | 2006-08-17 |  | 0d |  |  |  | 168h |  |
| 330 | 1.9.2.4.1.1 | **Team Development** | 7d | 2006-07-24 | 2006-08-01 |  | 0d |  |  |  | 56h |  |
| 331 | 1.9.2.4.1.1.1 | **Development of Use Cases** | 7d | 2006-07-24 | 2006-08-01 |  | 0d |  |  | All Teams | 56h | prototype conversion, sequence diagram implementation |
| 332 | 1.9.2.4.1.1.1.1 | Create Unit Tests | 4d | 2006-07-24 | 2006-07-27 | 323 | 0d |  | start no earlier than 2006-03-28 |  |  |  |
| 333 | 1.9.2.4.1.1.1.2 | Convert Prototype | 4d | 2006-07-24 | 2006-07-27 | 323 | 0d |  | start no earlier than 2006-03-29 |  |  |  |
| 334 | 1.9.2.4.1.1.1.3 | Configure components | 4d | 2006-07-24 | 2006-07-27 | 323 | 0d |  | start no earlier than 2006-03-29 |  |  |  |
| 335 | 1.9.2.4.1.1.1.4 | Test | 3d | 2006-07-28 | 2006-08-01 | 332, 333, 334 | 0d |  |  |  |  |  |
| 336 | 1.9.2.4.1.2 | **Test case challenge** | 2d | 2006-08-02 | 2006-08-03 | 335 | 0d |  |  | All Captains | 56h |  |
| 337 | 1.9.2.4.1.2.1 | Submit Challenges | 1d | 2006-08-02 | 2006-08-02 |  | 0d |  |  |  |  |  |
| 338 | 1.9.2.4.1.2.2 | Appeals response | 1d | 2006-08-03 | 2006-08-03 | 337 | 0d |  |  | Reviewer3; Reviewer2; Reviewer1; Assembly Manager; Architect | 40h |  |
| 339 | 1.9.2.4.1.3 | **Review** | 10d | 2006-08-04 | 2006-08-17 |  | 0d |  |  |  | 56h |  |
| 340 | 1.9.2.4.1.3.1 | Score Testcases | 1d | 2006-08-04 | 2006-08-04 | 336 | 1d |  |  | DE | 8h |  |
| 341 | 1.9.2.4.1.3.2 | Score Submissions | 2d | 2006-08-04 | 2006-08-07 | 336 | 0d |  |  | DE | 16h |  |
| 342 | 1.9.2.4.1.3.3 | Review Code | 2d | 2006-08-08 | 2006-08-09 | 340, 341 | 0d |  |  | Review Team | 16h |  |
| 343 | 1.9.2.4.1.3.4 | Appeals | 1d | 2006-08-10 | 2006-08-10 | 342 | 0d |  |  | Review Team | 8h |  |
| 344 | 1.9.2.4.1.3.5 | Appeals Response | 1d | 2006-08-11 | 2006-08-11 | 343 | 0d |  |  | Review Team | 8h |  |
| 345 | 1.9.2.4.1.3.6 | Final Fixes | 3d | 2006-08-14 | 2006-08-16 | 344 | 0d |  |  |  |  |  |
| 346 | 1.9.2.4.1.3.7 | Final Review | 1d | 2006-08-17 | 2006-08-17 | 345 | 0d |  |  |  |  |  |
| 347 | 1.9.3 | **Project Admin Assembly** | 35d | 2006-06-30 | 2006-08-17 |  | 0d |  |  |  | 216h |  |
| 348 | 1.9.3.1 | **Setup** | 16d | 2006-06-30 | 2006-07-21 |  | 15d |  |  |  |  |  |
| 349 | 1.9.3.1.1 | Divide Spec and Arch Deliverables | 1d | 2006-06-30 | 2006-06-30 | 38FS-15d | 34d |  | start no earlier than 2006-03-29 |  |  |  |
| 350 | 1.9.3.1.2 | TopCoder Website Content Creation | 5d | 2006-07-07 | 2006-07-13 | 38FS-10d | 25d |  |  |  |  |  |
| 351 | 1.9.3.1.3 | TopCoder Website Informaiton Posted | 1d | 2006-07-14 | 2006-07-14 | 38FS-5d | 14d | 0d | start no earlier than 2006-05-17 |  |  |  |
| 352 | 1.9.3.1.4 | Package Components | 1d | 2006-07-21 | 2006-07-21 | 38 | 0d |  |  |  |  |  |

| ID | WBS | Task | Duration | Start | Finish | Predecessors | Total slack | Free slack | Constraint | Resources | Work | Text1 |
| --- | --- | --- | --- | --- | --- | --- | --- | --- | --- | --- | --- | --- |
| 353 | 1.9.3.2 | **Test Case Development** | 7d | 2006-07-17 | 2006-07-25 |  | 17d |  |  |  | 48h |  |
| 354 | 1.9.3.2.1 | Submit tests | 6d | 2006-07-17 | 2006-07-24 | 351 | 17d | 0d | start no earlier than 2006-03-22 | test case participants | 48h |  |
| 355 | 1.9.3.2.2 | Screen test cases | 1d | 2006-07-25 | 2006-07-25 | 354 | 17d |  |  |  |  |  |
| 356 | 1.9.3.3 | Team Formation | 10d | 2006-07-17 | 2006-07-28 | 351 | 14d |  |  |  |  |  |
| 357 | 1.9.3.4 | **Development** | 19d | 2006-07-24 | 2006-08-17 |  | 0d |  |  |  | 168h |  |
| 358 | 1.9.3.4.1 | **Opening Round** | 19d | 2006-07-24 | 2006-08-17 |  | 0d |  |  |  | 168h |  |
| 359 | 1.9.3.4.1.1 | **Team Development** | 7d | 2006-07-24 | 2006-08-01 |  | 0d |  |  |  | 56h |  |
| 360 | 1.9.3.4.1.1.1 | **Development of Use Cases** | 7d | 2006-07-24 | 2006-08-01 |  | 0d |  |  | All Teams | 56h | prototype conversion, sequence diagram implementation |
| 361 | 1.9.3.4.1.1.1.1 | Create Unit Tests | 4d | 2006-07-24 | 2006-07-27 | 352 | 0d |  | start no earlier than 2006-03-28 |  |  |  |
| 362 | 1.9.3.4.1.1.1.2 | Convert Prototype | 4d | 2006-07-24 | 2006-07-27 | 352 | 0d |  | start no earlier than 2006-03-29 |  |  |  |
| 363 | 1.9.3.4.1.1.1.3 | Configure components | 4d | 2006-07-24 | 2006-07-27 | 352 | 0d |  | start no earlier than 2006-03-29 |  |  |  |
| 364 | 1.9.3.4.1.1.1.4 | Test | 3d | 2006-07-28 | 2006-08-01 | 361, 362, 363 | 0d |  |  |  |  |  |
| 365 | 1.9.3.4.1.2 | **Test case challenge** | 2d | 2006-08-02 | 2006-08-03 | 364 | 0d |  |  | All Captains | 56h |  |
| 366 | 1.9.3.4.1.2.1 | Submit Challenges | 1d | 2006-08-02 | 2006-08-02 |  | 0d |  |  |  |  |  |
| 367 | 1.9.3.4.1.2.2 | Appeals response | 1d | 2006-08-03 | 2006-08-03 | 366 | 0d |  |  | Reviewer3; Reviewer2; Reviewer1; Assembly Manager; Architect | 40h |  |
| 368 | 1.9.3.4.1.3 | **Review** | 10d | 2006-08-04 | 2006-08-17 |  | 0d |  |  |  | 56h |  |
| 369 | 1.9.3.4.1.3.1 | Score Testcases | 1d | 2006-08-04 | 2006-08-04 | 365 | 1d |  |  | DE | 8h |  |
| 370 | 1.9.3.4.1.3.2 | Score Submissions | 2d | 2006-08-04 | 2006-08-07 | 365 | 0d |  |  | DE | 16h |  |
| 371 | 1.9.3.4.1.3.3 | Review Code | 2d | 2006-08-08 | 2006-08-09 | 369, 370 | 0d |  |  | Review Team | 16h |  |
| 372 | 1.9.3.4.1.3.4 | Appeals | 1d | 2006-08-10 | 2006-08-10 | 371 | 0d |  |  | Review Team | 8h |  |
| 373 | 1.9.3.4.1.3.5 | Appeals Response | 1d | 2006-08-11 | 2006-08-11 | 372 | 0d |  |  | Review Team | 8h |  |
| 374 | 1.9.3.4.1.3.6 | Final Fixes | 3d | 2006-08-14 | 2006-08-16 | 373 | 0d |  |  |  |  |  |
| 375 | 1.9.3.4.1.3.7 | Final Review | 1d | 2006-08-17 | 2006-08-17 | 374 | 0d |  |  |  |  |  |
| 376 | 1.9.4 | **Project Details Assembly** | 35d | 2006-06-30 | 2006-08-17 |  | 0d |  |  |  | 216h |  |
| 377 | 1.9.4.1 | **Setup** | 16d | 2006-06-30 | 2006-07-21 |  | 15d |  |  |  |  |  |
| 378 | 1.9.4.1.1 | Divide Spec and Arch Deliverables | 1d | 2006-06-30 | 2006-06-30 | 38FS-15d | 34d |  | start no earlier than 2006-03-29 |  |  |  |
| 379 | 1.9.4.1.2 | TopCoder Website Content Creation | 5d | 2006-07-07 | 2006-07-13 | 38FS-10d | 25d |  |  |  |  |  |
| 380 | 1.9.4.1.3 | TopCoder Website Informaiton Posted | 1d | 2006-07-14 | 2006-07-14 | 38FS-5d | 14d | 0d | start no earlier than 2006-05-17 |  |  |  |
| 381 | 1.9.4.1.4 | Package Components | 1d | 2006-07-21 | 2006-07-21 | 38 | 0d |  |  |  |  |  |

| ID | WBS | Task | Duration | Start | Finish | Predecessors | Total slack | Free slack | Constraint | Resources | Work | Text1 |
| --- | --- | --- | --- | --- | --- | --- | --- | --- | --- | --- | --- | --- |
| 382 | 1.9.4.2 | **Test Case Development** | 7d | 2006-07-17 | 2006-07-25 |  | 17d |  |  |  | 48h |  |
| 383 | 1.9.4.2.1 | Submit tests | 6d | 2006-07-17 | 2006-07-24 | 380 | 17d | 0d | start no earlier than 2006-03-22 | test case participants | 48h |  |
| 384 | 1.9.4.2.2 | Screen test cases | 1d | 2006-07-25 | 2006-07-25 | 383 | 17d |  |  |  |  |  |
| 385 | 1.9.4.3 | Team Formation | 10d | 2006-07-17 | 2006-07-28 | 380 | 14d |  |  |  |  |  |
| 386 | 1.9.4.4 | **Development** | 19d | 2006-07-24 | 2006-08-17 |  | 0d |  |  |  | 168h |  |
| 387 | 1.9.4.4.1 | **Opening Round** | 19d | 2006-07-24 | 2006-08-17 |  | 0d |  |  |  | 168h |  |
| 388 | 1.9.4.4.1.1 | **Team Development** | 7d | 2006-07-24 | 2006-08-01 |  | 0d |  |  |  | 56h |  |
| 389 | 1.9.4.4.1.1.1 | **Development of Use Cases** | 7d | 2006-07-24 | 2006-08-01 |  | 0d |  |  | All Teams | 56h | prototype conversion, sequence diagram implementation |
| 390 | 1.9.4.4.1.1.1.1 | Create Unit Tests | 4d | 2006-07-24 | 2006-07-27 | 381 | 0d |  | start no earlier than 2006-03-28 |  |  |  |
| 391 | 1.9.4.4.1.1.1.2 | Convert Prototype | 4d | 2006-07-24 | 2006-07-27 | 381 | 0d |  | start no earlier than 2006-03-29 |  |  |  |
| 393 | 1.9.4.4.1.1.1.3 | Test | 3d | 2006-07-28 | 2006-08-01 | 390, 391 | 0d |  |  |  |  |  |
| 394 | 1.9.4.4.1.2 | **Test case challenge** | 2d | 2006-08-02 | 2006-08-03 | 393 | 0d |  |  | All Captains | 56h |  |
| 395 | 1.9.4.4.1.2.1 | Submit Challenges | 1d | 2006-08-02 | 2006-08-02 |  | 0d |  |  |  |  |  |
| 396 | 1.9.4.4.1.2.2 | Appeals response | 1d | 2006-08-03 | 2006-08-03 | 395 | 0d |  |  | Reviewer3; Reviewer2; Reviewer1; Assembly Manager; Architect | 40h |  |
| 397 | 1.9.4.4.1.3 | **Review** | 10d | 2006-08-04 | 2006-08-17 |  | 0d |  |  |  | 56h |  |
| 398 | 1.9.4.4.1.3.1 | Score Testcases | 1d | 2006-08-04 | 2006-08-04 | 394 | 1d |  |  | DE | 8h |  |
| 399 | 1.9.4.4.1.3.2 | Score Submissions | 2d | 2006-08-04 | 2006-08-07 | 394 | 0d |  |  | DE | 16h |  |
| 400 | 1.9.4.4.1.3.3 | Review Code | 2d | 2006-08-08 | 2006-08-09 | 398, 399 | 0d |  |  | Review Team | 16h |  |
| 401 | 1.9.4.4.1.3.4 | Appeals | 1d | 2006-08-10 | 2006-08-10 | 400 | 0d |  |  | Review Team | 8h |  |
| 402 | 1.9.4.4.1.3.5 | Appeals Response | 1d | 2006-08-11 | 2006-08-11 | 401 | 0d |  |  | Review Team | 8h |  |
| 403 | 1.9.4.4.1.3.6 | Final Fixes | 3d | 2006-08-14 | 2006-08-16 | 402 | 0d |  |  |  |  |  |
| 404 | 1.9.4.4.1.3.7 | Final Review | 1d | 2006-08-17 | 2006-08-17 | 403 | 0d |  |  |  |  |  |
| 405 | 1.10 | **Deployment** | 13d | 2006-08-18 | 2006-09-06 |  | 16d | 0d |  |  | 152h |  |
| 406 | 1.10.1 | Deployment | 4d | 2006-08-18 | 2006-08-23 | 288 | 16d | 0d | finish no earlier than 2005-05-27 | Project Manager; Application Assembler 1 | 64h |  |

| ID | WBS | Task | Type | Duration | Start | Finish | Predecessors | Total slack | Free slack | Constraint | Resources | Work |
| --- | --- | --- | --- | --- | --- | --- | --- | --- | --- | --- | --- | --- |
| 407 | 1.10.2 | **Testing Iteration** |  | 9d | 2006-08-24 | 2006-09-06 |  | 16d |  |  |  | 88h |
| 408 | 1.10.2.1 | Test Plan Execution |  | 3d | 2006-08-24 | 2006-08-28 | 406 | 16d | 0d | finish no earlier than 2005-06-03 | Project Manager; Application Assembler 1 | 48h |
| 409 | 1.10.2.2 | User Acceptance Testing | milestone | 5d | 2006-08-29 | 2006-09-05 | 408 | 16d | 0d | finish no earlier than 2005-06-03 | Customer | 40h |
| 410 | 1.10.2.3 | PM Certification |  | 1d | 2006-09-06 | 2006-09-06 | 409 | 16d | 0d |  |  |  |
| 411 | 1.11 | **Support** |  | 30d | 2006-08-18 | 2006-09-29 |  | 0d |  |  |  | 240h |
| 412 | 1.11.1 | Capture DRs |  | 15d | 2006-08-18 | 2006-09-08 | 288 | 0d |  |  | Project Manager | 120h |
| 413 | 1.11.2 | Release Fix |  | 15d | 2006-09-11 | 2006-09-29 | 412 | 0d |  |  | Project Manager | 120h |
| 414 | 1.12 | Send out how-to info to users |  | 1d | 2006-09-07 | 2006-09-07 | 410 | 16d |  |  |  |  |
| 415 | 1.13 | Beta Release to internal users |  | 1d | 2006-09-07 | 2006-09-07 | 405 | 16d |  |  |  |  |
